# P1 - PGSI

Schedule from MS Project, 2008-04-14 to 2008-08-13, costs in €.
Guerrero

## Calendars

- Estándar: Mon-Fri 09:00-13:00, 15:00-19:00; Sat-Sun off.

## Resources

| Resource | Group | Rate | Cost per use |
| --- | --- | --- | --- |
| Jefe de Proyecto | Dirección | 21.63 |  |
| Analista | Equipo de diseño | 20 |  |
| Programador | Equipo de desarrollo | 12 |  |
| Programador Auxiliar | Equipo de desarrollo | 14 |  |
| Equipos informaticos |  | 2000 |  |
| Servicio técnico |  |  | 100 |

## Schedule

| ID | WBS | Task | Type | Duration | Start | Finish | Predecessors | Total slack | Free slack | Resources | Work | Cost |
| --- | --- | --- | --- | --- | --- | --- | --- | --- | --- | --- | --- | --- |
| 1 | 1 | **Análisis** |  | 33.85d | 2008-04-14 | 2008-05-29 |  | 0d |  |  | 474.68h | 9,871.77 |
| 2 | 1.1 | **1. Definición del sistema** |  | 6.12d | 2008-04-14 | 2008-04-22 |  | 0d |  |  | 123h | 2,527.02 |
| 3 | 1.1.1 | 1.1 Determinación del alcance del sistema |  | 33h | 2008-04-14 | 2008-04-18 |  | 0d |  | Analista [200%]; Jefe de Proyecto | 99h | 2,033.94 |
| 4 | 1.1.2 | 1.2 Identificación del entorno tecnológico |  | 8h | 2008-04-21 | 2008-04-22 | 3FS+1d | 0d |  | Analista [200%]; Jefe de Proyecto | 24h | 493.08 |
| 5 | 1.2 | **2. Establecimiento de requisitos** |  | 10.38d | 2008-04-22 | 2008-05-06 |  | 0d |  |  | 91h | 1,820 |
| 6 | 1.2.1 | 2.1 Obtención y análisis de requisitos |  | 75h | 2008-04-22 | 2008-05-05 | 4 | 0d |  | Analista | 75h | 1,500 |
| 7 | 1.2.2 | 2.2 Validación de los requisitos |  | 8h | 2008-05-05 | 2008-05-06 | 6FS-1d | 0d |  | Analista [200%] | 16h | 320 |
| 8 | 1.3 | **3. Identificación de Subsistemas de análisis** |  | 7.18d | 2008-05-06 | 2008-05-15 |  | 3.3d |  |  | 58h | 1,207.4 |
| 9 | 1.3.1 | 3.1 Determinación de subsistemas de análisis |  | 42.42h | 2008-05-06 | 2008-05-13 | 7 | 3.3d | 0d | Analista [75%]; Jefe de Proyecto [33%] | 28h | 582.88 |
| 10 | 1.3.2 | 3.2 Integración de subsistemas de análisis |  | 15h | 2008-05-13 | 2008-05-15 | 9 | 3.3d |  | Jefe de Proyecto; Analista | 30h | 624.52 |
| 11 | 1.4 | **4. Elaboración del Modelo de Datos** |  | 10.48d | 2008-05-06 | 2008-05-20 |  | 0d |  |  | 51.92h | 1,038.4 |
| 12 | 1.4.1 | 4.1 Elaboración del modelo conceptual y lógico de datos |  | 63.84h | 2008-05-06 | 2008-05-16 | 7 | 0d |  | Analista [50%] | 31.92h | 638.4 |
| 13 | 1.4.2 | 4.2 Normalización |  | 10h | 2008-05-16 | 2008-05-19 | 12 | 0d |  | Analista | 10h | 200 |
| 14 | 1.4.3 | 4.3 Especificación de necesidades de carga inicial |  | 10h | 2008-05-19 | 2008-05-20 | 13 | 0d |  | Analista | 10h | 200 |
| 15 | 1.5 | 5. Elaboración del Modelo de Procesos |  | 21.12h | 2008-05-06 | 2008-05-09 | 7 | 7.84d |  | Analista [50%] | 10.56h | 211.2 |
| 16 | 1.6 | **6. Definición de Interfaces de Usuario** |  | 3.33d | 2008-05-06 | 2008-05-09 |  | 7.15d |  |  | 11.2h | 224 |
| 17 | 1.6.1 | 6.1 Especificación de principios generales de la interfaz |  | 12.8h | 2008-05-06 | 2008-05-08 | 7 | 7.15d | 0d | Analista [25%] | 3.2h | 64 |
| 18 | 1.6.2 | 6.2 Identificación de perfiles y diálogos |  | 8h | 2008-05-08 | 2008-05-09 | 17 | 7.15d |  | Analista | 8h | 160 |
| 19 | 1.7 | 7. Análisis de consistencia y especificación de requisitos |  | 44h | 2008-05-20 | 2008-05-28 | 10, 14, 15, 18 | 0.25d |  | Analista | 44h | 880 |
| 20 | 1.8 | **8. Especificación del Plan de Pruebas** |  | 5.75d | 2008-05-20 | 2008-05-28 |  | 0d |  |  | 76h | 1,769.04 |
| 21 | 1.8.1 | 8.1 Definición del alcance y requisitos de las pruebas |  | 32h | 2008-05-20 | 2008-05-26 | 10, 14, 15, 18 | 0d |  | Jefe de Proyecto; Analista; Servicio técnico | 48h | 1,086.15 |
| 22 | 1.8.2 | 8.2 Definición de las pruebas de aceptación del sistema |  | 14h | 2008-05-26 | 2008-05-28 | 21 | 0d |  | Jefe de Proyecto; Analista; Servicio técnico | 28h | 682.88 |
| 23 | 1.9 | 9. Aprobación del análisis del Sistema de Información |  | 9h | 2008-05-28 | 2008-05-29 | 19, 22 | 0d |  | Jefe de Proyecto | 9h | 194.71 |
| 24 | 1.10 | Fin Análisis | milestone | 0d | 2008-05-29 | 2008-05-29 | 23 | 0d |  |  |  |  |

| ID | WBS | Task | Type | Duration | Start | Finish | Predecessors | Total slack | Free slack | Resources | Work | Cost |
| --- | --- | --- | --- | --- | --- | --- | --- | --- | --- | --- | --- | --- |
| 25 | 2 | **Diseño** |  | 30.06d | 2008-05-29 | 2008-07-10 | 1 | 0d |  |  | 494.5h | 10,739.94 |
| 26 | 2.1 | 1. Definición de la Arquitectura del Sistema |  | 26h | 2008-05-29 | 2008-06-04 | 24 | 0d |  | Servicio técnico; Analista [200%] | 52h | 1,140 |
| 27 | 2.2 | 2. Diseño de arquitectura de soporte |  | 38h | 2008-06-04 | 2008-06-10 | 26 | 3.69d |  | Analista | 38h | 760 |
| 28 | 2.3 | **3. Diseño de arquitectura de módulos del sistema** |  | 8.33d | 2008-06-04 | 2008-06-16 |  | 0.1d |  |  | 67h | 1,401.03 |
| 29 | 2.3.1 | 3.1 Diseño de módulos del sistema |  | 30.67h | 2008-06-04 | 2008-06-09 | 26 | 0.1d | 0d | Analista [50%]; Jefe de Proyecto [50%] | 23h | 485.06 |
| 30 | 2.3.2 | 3.2 Diseño de la comunicación entre módulos |  | 28h | 2008-06-09 | 2008-06-13 | 29 | 0.1d | 0d | Jefe de Proyecto [50%]; Analista [50%] | 28h | 582.88 |
| 31 | 2.3.3 | 3.3 Revisión de la interfaz de usuario |  | 8h | 2008-06-13 | 2008-06-16 | 30 | 0.1d |  | Jefe de Proyecto; Analista | 16h | 333.08 |
| 32 | 2.4 | **4. Diseño físico de datos** |  | 8.44d | 2008-06-04 | 2008-06-16 |  | 0d |  |  | 59.5h | 1,238.63 |
| 33 | 2.4.1 | 4.1 Diseño del modelo físico de datos |  | 17.5h | 2008-06-04 | 2008-06-06 | 26 | 0d |  | Analista [50%]; Jefe de Proyecto [50%] | 17.5h | 364.3 |
| 34 | 2.4.2 | 4.2 Especificación de los caminos de acceso a los datos |  | 16h | 2008-06-06 | 2008-06-10 | 33 | 0d |  | Jefe de Proyecto [50%]; Analista [50%] | 16h | 333.08 |
| 35 | 2.4.3 | 4.3 Especificación de la distribución de datos |  | 26.83h | 2008-06-10 | 2008-06-16 | 34 | 0d |  | Jefe de Proyecto [50%]; Analista [50%] | 26h | 541.25 |
| 36 | 2.5 | 5. Verificación y aceptación de la arquitectura del sistema |  | 8h | 2008-06-16 | 2008-06-17 | 27, 31, 35 | 0d |  | Jefe de Proyecto; Analista [200%] | 24h | 493.08 |
| 37 | 2.6 | 6. Generación de especificaciones de construcción |  | 57h | 2008-06-17 | 2008-06-27 | 36 | 8.38d |  | Jefe de Proyecto; Analista; Servicio técnico | 74h | 1,640.48 |
| 38 | 2.7 | **7. Diseño de la migración y carga inicial de datos** |  | 14.38d | 2008-06-17 | 2008-07-07 |  | 2d |  |  | 108h | 2,348.27 |
| 39 | 2.7.1 | 7.1 Especificación del entorno de carga inicial |  | 17h | 2008-06-17 | 2008-06-19 | 36 | 2d | 0d | Servicio técnico |  | 100 |
| 40 | 2.7.2 | 7.2 Diseño de procedimientos de carga inicial |  | 34h | 2008-06-19 | 2008-07-02 | 39 | 2d | 0d | Jefe de Proyecto; Analista | 54h | 1,124.13 |
| 41 | 2.7.3 | 7.3 Diseño detallado de componentes de carga inicial |  | 27h | 2008-07-02 | 2008-07-07 | 40 | 2d |  | Jefe de Proyecto; Analista | 54h | 1,124.13 |
| 42 | 2.8 | 8. Especificación técnica del plan de pruebas |  | 32h | 2008-06-17 | 2008-06-30 | 36 | 7.25d |  | Jefe de Proyecto; Analista; Servicio técnico | 32h | 766.15 |
| 43 | 2.9 | **9. Establecimiento de los requisitos de implantación** |  | 14.38d | 2008-06-19 | 2008-07-09 |  | 0d |  |  | 32h | 779.23 |
| 44 | 2.9.1 | 9.1 Especificación de requisitos de documentación de usuario |  | 16h | 2008-06-19 | 2008-07-01 | 36 | 6.25d |  | Jefe de Proyecto; Analista | 16h | 333.08 |
| 45 | 2.9.2 | 9.2 Especificación de requisitos de implantación |  | 16h | 2008-07-07 | 2008-07-09 | 36 | 0d |  | Jefe de Proyecto; Servicio técnico | 16h | 446.15 |
| 46 | 2.10 | 10. Aprobación del diseño del Sistema de Información |  | 8h | 2008-07-09 | 2008-07-10 | 37, 41, 42, 44, 45 | 0d |  | Jefe de Proyecto | 8h | 173.08 |
| 47 | 2.11 | Fin Diseño | milestone | 0d | 2008-07-10 | 2008-07-10 | 46 | 0d |  |  |  |  |
| 48 | 3 | **Construcción** |  | 23.38d | 2008-07-10 | 2008-08-13 | 25 | 0d |  |  | 718h | 11,600.12 |
| 49 | 3.1 | 1. Preparación del entorno de generación y construcción |  | 36h | 2008-07-10 | 2008-07-17 | 47 | 0d |  | Jefe de Proyecto; Analista | 72h | 1,498.85 |
| 50 | 3.2 | 2. Generación del código de los componentes y procedimientos |  | 87h | 2008-07-17 | 2008-08-01 | 49 | 0d |  | Programador [300%] | 261h | 3,132 |

| ID | WBS | Task | Type | Duration | Start | Finish | Predecessors | Total slack | Free slack | Resources | Work | Cost |
| --- | --- | --- | --- | --- | --- | --- | --- | --- | --- | --- | --- | --- |
| 51 | 3.3 | **3. Ejecución de las Pruebas Unitarias** |  | 6.75d | 2008-08-01 | 2008-08-12 |  | 0d |  |  | 62h | 744 |
| 52 | 3.3.1 | 3.1 Preparación del entorno de pruebas unitarias |  | 3.67h | 2008-08-01 | 2008-08-01 | 50 | 0d |  | Programador [300%] | 11h | 132 |
| 53 | 3.3.2 | 3.2 Realización y evaluación de las pruebas unitarias |  | 17h | 2008-08-07 | 2008-08-12 | 52, 56FF | 0d |  | Programador [300%] | 51h | 612 |
| 54 | 3.4 | **4. Ejecución de las Pruebas de Integración** |  | 6.75d | 2008-08-01 | 2008-08-12 |  | 0d |  |  | 27h | 540 |
| 55 | 3.4.1 | 4.1 Preparación del entorno de las pruebas de integración |  | 10h | 2008-08-01 | 2008-08-04 | 50, 52SS | 0d |  | Analista | 10h | 200 |
| 56 | 3.4.2 | 4.2 Realización y evaluación del resultado de las pruebas de integración |  | 17h | 2008-08-07 | 2008-08-12 | 55, 59FF | 0d |  | Analista | 17h | 340 |
| 57 | 3.5 | **5. Ejecución de las Pruebas del Sistema** |  | 6.75d | 2008-08-01 | 2008-08-12 |  | 0d |  |  | 26h | 541.25 |
| 58 | 3.5.1 | 5.1 Preparación del entorno de las pruebas del sistema |  | 5.5h | 2008-08-01 | 2008-08-01 | 50, 55SS | 0d |  | Analista; Jefe de Proyecto | 11h | 228.99 |
| 59 | 3.5.2 | 5.2 Realización y evaluación de las pruebas del sistema |  | 15h | 2008-08-04 | 2008-08-12 | 58 | 0d |  | Analista; Jefe de Proyecto | 15h | 312.26 |
| 60 | 3.6 | 6. Elaboración de los Manuales de Usuario |  | 41.66h | 2008-08-01 | 2008-08-11 | 50 | 0.94d |  | Jefe de Proyecto; Analista | 82h | 1,707.02 |
| 61 | 3.7 | **7. Definición de la Formación de Usuarios Finales** |  | 7.42d | 2008-07-10 | 2008-07-22 |  | 14.71d |  |  | 43h | 860 |
| 62 | 3.7.1 | 7.1 Definición del esquema de formación |  | 26h | 2008-07-10 | 2008-07-18 | 46 | 14.71d | 0d | Analista | 26h | 520 |
| 63 | 3.7.2 | 7.2 Especificación de los recursos y entornos de formación |  | 17h | 2008-07-18 | 2008-07-22 | 62 | 14.71d |  | Analista | 17h | 340 |
| 64 | 3.8 | **8. Construcción de los Componentes y Procedimientos de la Carga Inicial de Datos** |  | 9.75d | 2008-07-10 | 2008-07-24 |  | 12.38d |  |  | 135h | 2,360.65 |
| 65 | 3.8.1 | 8.1 Preparación y generación de código de los componentes y procedimientos de carga inicial de datos |  | 34h | 2008-07-10 | 2008-07-21 | 46 | 12.38d | 0d | Jefe de Proyecto; Analista; Programador [300%] | 85h | 1,319.79 |
| 66 | 3.8.2 | 8.2 Realización y evaluación de las pruebas de carga inicial de datos |  | 25h | 2008-07-21 | 2008-07-24 | 65 | 12.38d |  | Jefe de Proyecto; Analista | 50h | 1,040.87 |
| 67 | 3.9 | 9. Aprobación del Sistema de Información |  | 10h | 2008-08-12 | 2008-08-13 | 53, 56, 59, 60, 63, 66 | 0d |  | Jefe de Proyecto | 10h | 216.35 |
| 68 | 3.10 | Fin Proyecto | milestone | 0d | 2008-08-13 | 2008-08-13 | 67 | 0d |  |  |  |  |
