# P1 - PGSI con linea base

Schedule from MS Project, 2008-04-14 to 2008-08-22, status date 2008-06-02, costs in €, A marks actual dates.
Guerrero

## Calendars

- Estándar: Mon-Fri 09:00-13:00, 15:00-19:00; Sat-Sun off. Exceptions (off unless hours are given): 2008-05-01, 2008-08-15, 2008-08-18 to 2008-08-22.

## Resources

| Resource | Group | Rate | Cost per use |
| --- | --- | --- | --- |
| Jefe de Proyecto | Dirección | 21.63 |  |
| Analista | Equipo de diseño | 20 |  |
| Programador | Equipo de desarrollo | 12 |  |
| Programador Auxiliar | Equipo de desarrollo | 14 |  |
| Equipos informaticos |  | 2000 |  |
| Servicio técnico |  |  | 100 |

## Schedule

| ID | WBS | Task | Type | Duration | Start | Finish | Predecessors | Complete | Baseline start | Baseline finish | Baseline duration | Resources | Work | Actual work | Cost | Baseline cost | Actual cost |
| --- | --- | --- | --- | --- | --- | --- | --- | --- | --- | --- | --- | --- | --- | --- | --- | --- | --- |
| 1 | 1 | **Análisis** |  | 32.6d | 2008-04-14 A | 2008-05-29 A |  | 100% | 2008-04-14 | 2008-05-29 | 32.85d |  | 472.68h | 472.68h | 9,831.77 | 9,871.77 | 9,831.77 |
| 2 | 1.1 | **1. Definición del sistema** |  | 6.12d | 2008-04-14 A | 2008-04-22 A |  | 100% | 2008-04-14 | 2008-04-22 | 6.12d |  | 123h | 123h | 2,527.02 | 2,527.02 | 2,527.02 |
| 3 | 1.1.1 | 1.1 Determinación del alcance del sistema |  | 34h | 2008-04-14 A | 2008-04-18 A |  | 100% | 2008-04-14 | 2008-04-18 | 34h | Analista [200%]; Jefe de Proyecto | 99h | 99h | 2,033.94 | 2,033.94 | 2,033.94 |
| 4 | 1.1.2 | 1.2 Identificación del entorno tecnológico |  | 8h | 2008-04-21 A | 2008-04-22 A | 3FS+1d | 100% | 2008-04-21 | 2008-04-22 | 8h | Analista [200%]; Jefe de Proyecto | 24h | 24h | 493.08 | 493.08 | 493.08 |
| 5 | 1.2 | **2. Establecimiento de requisitos** |  | 9.38d | 2008-04-22 A | 2008-05-06 A |  | 100% | 2008-04-22 | 2008-05-06 | 9.38d |  | 91h | 91h | 1,820 | 1,820 | 1,820 |
| 6 | 1.2.1 | 2.1 Obtención y análisis de requisitos |  | 74h | 2008-04-22 A | 2008-05-06 A | 4 | 100% | 2008-04-22 | 2008-05-06 | 75h | Analista [114.3%] | 75h | 75h | 1,500 | 1,500 | 1,500 |
| 7 | 1.2.2 | 2.2 Validación de los requisitos |  | 8h | 2008-05-05 A | 2008-05-06 A | 6FS-1d | 100% | 2008-05-05 | 2008-05-06 | 8h | Analista [200%] | 16h | 16h | 320 | 320 | 320 |
| 8 | 1.3 | **3. Identificación de Subsistemas de análisis** |  | 7.3d | 2008-05-06 A | 2008-05-15 A |  | 100% | 2008-05-06 | 2008-05-15 | 7.3d |  | 58h | 58h | 1,207.4 | 1,207.4 | 1,207.4 |
| 9 | 1.3.1 | 3.1 Determinación de subsistemas de análisis |  | 42.42h | 2008-05-06 A | 2008-05-13 A | 7 | 100% | 2008-05-06 | 2008-05-13 | 42.42h | Analista [75%]; Jefe de Proyecto [33%] | 28h | 28h | 582.88 | 582.88 | 582.88 |
| 10 | 1.3.2 | 3.2 Integración de subsistemas de análisis |  | 15h | 2008-05-13 A | 2008-05-15 A | 9 | 100% | 2008-05-13 | 2008-05-15 | 15h | Jefe de Proyecto; Analista | 30h | 30h | 624.52 | 624.52 | 624.52 |
| 11 | 1.4 | **4. Elaboración del Modelo de Datos** |  | 10.23d | 2008-05-06 A | 2008-05-20 A |  | 100% | 2008-05-06 | 2008-05-20 | 10.48d |  | 49.92h | 49.92h | 998.4 | 1,038.4 | 998.4 |
| 12 | 1.4.1 | 4.1 Elaboración del modelo conceptual y lógico de datos |  | 63.84h | 2008-05-06 A | 2008-05-16 A | 7 | 100% | 2008-05-06 | 2008-05-16 | 63.84h | Analista [50%] | 31.92h | 31.92h | 638.4 | 638.4 | 638.4 |
| 13 | 1.4.2 | 4.2 Normalización |  | 8h | 2008-05-16 A | 2008-05-19 A | 12 | 100% | 2008-05-16 | 2008-05-19 | 10h | Analista | 8h | 8h | 160 | 200 | 160 |
| 14 | 1.4.3 | 4.3 Especificación de necesidades de carga inicial |  | 10h | 2008-05-19 A | 2008-05-20 A | 13 | 100% | 2008-05-19 | 2008-05-20 | 10h | Analista | 10h | 10h | 200 | 200 | 200 |
| 15 | 1.5 | 5. Elaboración del Modelo de Procesos |  | 21.12h | 2008-05-06 A | 2008-05-09 A | 7 | 100% | 2008-05-06 | 2008-05-09 | 21.12h | Analista [50%] | 10.56h | 10.56h | 211.2 | 211.2 | 211.2 |
| 16 | 1.6 | **6. Definición de Interfaces de Usuario** |  | 2.6d | 2008-05-06 A | 2008-05-09 A |  | 100% | 2008-05-06 | 2008-05-09 | 2.6d |  | 11.2h | 11.2h | 224 | 224 | 224 |
| 17 | 1.6.1 | 6.1 Especificación de principios generales de la interfaz |  | 12.8h | 2008-05-06 A | 2008-05-08 A | 7 | 100% | 2008-05-06 | 2008-05-08 | 12.8h | Analista [25%] | 3.2h | 3.2h | 64 | 64 | 64 |
| 18 | 1.6.2 | 6.2 Identificación de perfiles y diálogos |  | 8h | 2008-05-08 A | 2008-05-09 A | 17 | 100% | 2008-05-08 | 2008-05-09 | 8h | Analista | 8h | 8h | 160 | 160 | 160 |
| 19 | 1.7 | 7. Análisis de consistencia y especificación de requisitos |  | 44h | 2008-05-20 A | 2008-05-28 A | 10, 14, 15, 18 | 100% | 2008-05-20 | 2008-05-28 | 44h | Analista | 44h | 44h | 880 | 880 | 880 |
| 20 | 1.8 | **8. Especificación del Plan de Pruebas** |  | 5.75d | 2008-05-20 A | 2008-05-28 A |  | 100% | 2008-05-20 | 2008-05-28 | 5.75d |  | 76h | 76h | 1,769.04 | 1,769.04 | 1,769.04 |
| 21 | 1.8.1 | 8.1 Definición del alcance y requisitos de las pruebas |  | 32h | 2008-05-20 A | 2008-05-26 A | 10, 14, 15, 18 | 100% | 2008-05-20 | 2008-05-26 | 32h | Jefe de Proyecto; Analista; Servicio técnico | 48h | 48h | 1,086.15 | 1,086.15 | 1,086.15 |
| 22 | 1.8.2 | 8.2 Definición de las pruebas de aceptación del sistema |  | 14h | 2008-05-26 A | 2008-05-28 A | 21 | 100% | 2008-05-26 | 2008-05-28 | 14h | Jefe de Proyecto; Analista; Servicio técnico | 28h | 28h | 682.88 | 682.88 | 682.88 |
| 23 | 1.9 | 9. Aprobación del análisis del Sistema de Información |  | 9h | 2008-05-28 A | 2008-05-29 A | 19, 22 | 100% | 2008-05-28 | 2008-05-29 | 9h | Jefe de Proyecto | 9h | 9h | 194.71 | 194.71 | 194.71 |
| 24 | 1.10 | Fin Análisis | milestone | 0d | 2008-05-29 A | 2008-05-29 A | 23 | 100% | 2008-05-29 | 2008-05-29 | 0d |  |  |  |  |  |  |

| ID | WBS | Task | Type | Duration | Start | Finish | Predecessors | Complete | Remaining | Baseline start | Baseline finish | Baseline duration | Total slack | Free slack | Resources | Work | Actual work | Cost | Baseline cost | Actual cost |
| --- | --- | --- | --- | --- | --- | --- | --- | --- | --- | --- | --- | --- | --- | --- | --- | --- | --- | --- | --- | --- |
| 25 | 2 | **Diseño** |  | 32.46d | 2008-05-29 A | 2008-07-15 | 1 | 2% | 31.67d | 2008-05-29 | 2008-07-11 | 30.64d | 0d |  |  | 522.5h | 22.32h | 10,991.53 | 10,459.53 | 624.08 |
| 26 | 2.1 | 1. Definición de la Arquitectura del Sistema |  | 40h | 2008-05-29 A | 2008-06-05 | 24 | 28% | 28.84h | 2008-05-29 | 2008-06-04 | 26h | 2.12d | 0d | Servicio técnico; Analista [200%] | 80h | 22.32h | 1,620 | 1,088 | 524.08 |
| 27 | 2.2 | 2. Diseño de arquitectura de soporte |  | 38h | 2008-06-05 | 2008-06-12 | 26 |  |  | 2008-06-04 | 2008-06-10 | 38h | 5.83d | 3.83d | Analista | 38h |  | 722 | 722 |  |
| 28 | 2.3 | **3. Diseño de arquitectura de módulos del sistema** |  | 8.58d | 2008-06-05 | 2008-06-18 |  |  |  | 2008-06-04 | 2008-06-16 | 8.89d | 2d |  |  | 67h |  | 1,371.36 | 1,371.36 |  |
| 29 | 2.3.1 | 3.1 Diseño de módulos del sistema |  | 34.67h | 2008-06-05 | 2008-06-11 | 26 |  |  | 2008-06-04 | 2008-06-10 | 30.67h | 1.88d | 0d | Analista [50%]; Jefe de Proyecto [50%] | 23h |  | 477.4 | 477.4 |  |
| 30 | 2.3.2 | 3.2 Diseño de la comunicación entre módulos |  | 32h | 2008-06-11 | 2008-06-17 | 29 |  |  | 2008-06-10 | 2008-06-13 | 29h | 1.88d | 0d | Jefe de Proyecto [50%]; Analista [50%] | 28h |  | 568.88 | 568.88 |  |
| 31 | 2.3.3 | 3.3 Revisión de la interfaz de usuario |  | 8h | 2008-06-17 | 2008-06-18 | 30 |  |  | 2008-06-13 | 2008-06-16 | 11.49h | 2d | 0d | Jefe de Proyecto; Analista | 16h |  | 325.08 | 325.08 |  |
| 32 | 2.4 | **4. Diseño físico de datos** |  | 7.69d | 2008-06-05 | 2008-06-17 |  |  |  | 2008-06-04 | 2008-06-13 | 7.69d | 2.9d |  |  | 59.5h |  | 1,208.88 | 1,208.88 |  |
| 33 | 2.4.1 | 4.1 Diseño del modelo físico de datos |  | 21.5h | 2008-06-05 | 2008-06-09 | 26 |  |  | 2008-06-04 | 2008-06-06 | 18.5h | 2.9d | 0d | Analista [50%]; Jefe de Proyecto [50%] | 17.5h |  | 355.55 | 355.55 |  |
| 34 | 2.4.2 | 4.2 Especificación de los caminos de acceso a los datos |  | 16h | 2008-06-09 | 2008-06-11 | 33 |  |  | 2008-06-06 | 2008-06-10 | 20h | 2.9d | 0d | Jefe de Proyecto [50%]; Analista [50%] | 16h |  | 325.08 | 325.08 |  |
| 35 | 2.4.3 | 4.3 Especificación de la distribución de datos |  | 30h | 2008-06-11 | 2008-06-17 | 34 |  |  | 2008-06-10 | 2008-06-13 | 28.34h | 2.9d | 0.9d | Jefe de Proyecto [50%]; Analista [50%] | 26h |  | 528.25 | 528.25 |  |
| 36 | 2.5 | 5. Verificación y aceptación de la arquitectura del sistema |  | 8h | 2008-06-18 | 2008-06-19 | 27, 31, 35 |  |  | 2008-06-17 | 2008-06-17 | 8h | 2d | 0d | Jefe de Proyecto; Analista [200%] | 24h |  | 477.08 | 477.08 |  |
| 37 | 2.6 | 6. Generación de especificaciones de construcción |  | 72h | 2008-06-19 | 2008-07-04 | 36 |  |  | 2008-06-18 | 2008-07-03 | 73h | 5.5d |  | Jefe de Proyecto; Analista; Servicio técnico | 74h |  | 1,603.48 | 1,603.48 |  |
| 38 | 2.7 | **7. Diseño de la migración y carga inicial de datos** |  | 14.5d | 2008-06-19 | 2008-07-09 |  |  |  | 2008-06-18 | 2008-07-08 | 14.75d | 2.25d |  |  | 108h |  | 2,294.27 | 2,294.27 |  |
| 39 | 2.7.1 | 7.1 Especificación del entorno de carga inicial |  | 17h | 2008-06-19 | 2008-06-23 | 36 |  |  | 2008-06-18 | 2008-06-20 | 17h | 2.25d | 0d | Servicio técnico |  |  | 100 | 100 |  |
| 40 | 2.7.2 | 7.2 Diseño de procedimientos de carga inicial |  | 27h | 2008-06-23 | 2008-06-26 | 39 |  |  | 2008-06-20 | 2008-06-25 | 31h | 2.25d | 0d | Jefe de Proyecto; Analista | 54h |  | 1,097.13 | 1,097.13 |  |
| 41 | 2.7.3 | 7.3 Diseño detallado de componentes de carga inicial |  | 54h | 2008-06-26 | 2008-07-09 | 40 |  |  | 2008-06-25 | 2008-07-08 | 54h | 2.38d |  | Jefe de Proyecto; Analista | 54h |  | 1,097.13 | 1,097.13 |  |
| 42 | 2.8 | 8. Especificación técnica del plan de pruebas |  | 20h | 2008-06-19 | 2008-06-23 | 36 |  |  | 2008-06-18 | 2008-06-19 | 16h | 14.75d |  | Jefe de Proyecto; Analista; Servicio técnico | 32h |  | 750.15 | 750.15 |  |
| 43 | 2.9 | **9. Establecimiento de los requisitos de implantación** |  | 16.88d | 2008-06-19 A | 2008-07-14 |  |  | 16.88d | 2008-06-18 | 2008-07-10 | 16.75d | 0d |  |  | 32h |  | 771.23 | 771.23 | 100 |
| 44 | 2.9.1 | 9.1 Especificación de requisitos de documentación de usuario |  | 16h | 2008-06-19 | 2008-07-01 | 36 |  |  | 2008-06-18 | 2008-06-27 | 16h | 9d |  | Jefe de Proyecto; Analista | 16h |  | 325.08 | 325.08 |  |
| 45 | 2.9.2 | 9.2 Especificación de requisitos de implantación |  | 16h | 2008-07-09 A | 2008-07-14 | 36 |  | 16h | 2008-07-08 | 2008-07-10 | 16h | 0d |  | Jefe de Proyecto; Servicio técnico | 16h |  | 446.15 | 446.15 | 100 |
| 46 | 2.10 | 10. Aprobación del diseño del Sistema de Información |  | 8h | 2008-07-14 | 2008-07-15 | 37, 41, 42, 44, 45 |  |  | 2008-07-10 | 2008-07-11 | 8h | 0d |  | Jefe de Proyecto | 8h |  | 173.08 | 173.08 |  |
| 47 | 2.11 | Fin Diseño | milestone | 0d | 2008-07-15 | 2008-07-15 | 46 |  |  | 2008-07-11 | 2008-07-11 | 0d | 0d |  |  |  |  |  |  |  |
| 48 | 3 | **Construcción** |  | 22.94d | 2008-07-15 | 2008-08-22 | 25 |  |  | 2008-07-11 | 2008-08-14 | 23.75d | 0d |  |  | 718h |  | 11,600.12 | 11,600.12 |  |
| 49 | 3.1 | 1. Preparación del entorno de generación y construcción |  | 40h | 2008-07-15 | 2008-07-21 | 47 |  |  | 2008-07-11 | 2008-07-18 | 40h | 0d |  | Jefe de Proyecto; Analista | 72h |  | 1,498.85 | 1,498.85 |  |
| 50 | 3.2 | 2. Generación del código de los componentes y procedimientos |  | 87h | 2008-07-21 | 2008-08-05 | 49 |  |  | 2008-07-18 | 2008-08-04 | 87h | 0d |  | Programador [300%] | 261h |  | 3,132 | 3,132 |  |

| ID | WBS | Task | Type | Duration | Start | Finish | Predecessors | Baseline start | Baseline finish | Baseline duration | Total slack | Free slack | Resources | Work | Cost | Baseline cost |
| --- | --- | --- | --- | --- | --- | --- | --- | --- | --- | --- | --- | --- | --- | --- | --- | --- |
| 51 | 3.3 | **3. Ejecución de las Pruebas Unitarias** |  | 6.88d | 2008-08-05 | 2008-08-14 |  | 2008-08-04 | 2008-08-12 | 6.88d | 0d |  |  | 62h | 744 | 744 |
| 52 | 3.3.1 | 3.1 Preparación del entorno de pruebas unitarias |  | 3.67h | 2008-08-05 | 2008-08-06 | 50 | 2008-08-04 | 2008-08-04 | 3.67h | 0d |  | Programador [300%] | 11h | 132 | 132 |
| 53 | 3.3.2 | 3.2 Realización y evaluación de las pruebas unitarias |  | 17h | 2008-08-12 | 2008-08-14 | 52, 56FF | 2008-08-08 | 2008-08-12 | 17h | 0d |  | Programador [300%] | 51h | 612 | 612 |
| 54 | 3.4 | **4. Ejecución de las Pruebas de Integración** |  | 6.88d | 2008-08-05 | 2008-08-14 |  | 2008-08-04 | 2008-08-12 | 6.88d | 0d |  |  | 27h | 540 | 540 |
| 55 | 3.4.1 | 4.1 Preparación del entorno de las pruebas de integración |  | 10h | 2008-08-05 | 2008-08-06 | 50, 52SS | 2008-08-04 | 2008-08-05 | 10h | 0d |  | Analista | 10h | 200 | 200 |
| 56 | 3.4.2 | 4.2 Realización y evaluación del resultado de las pruebas de integración |  | 17h | 2008-08-12 | 2008-08-14 | 55, 59FF | 2008-08-08 | 2008-08-12 | 17h | 0d |  | Analista | 17h | 340 | 340 |
| 57 | 3.5 | **5. Ejecución de las Pruebas del Sistema** |  | 6.88d | 2008-08-05 | 2008-08-14 |  | 2008-08-04 | 2008-08-12 | 6.88d | 0d |  |  | 26h | 541.25 | 541.25 |
| 58 | 3.5.1 | 5.1 Preparación del entorno de las pruebas del sistema |  | 5.5h | 2008-08-05 | 2008-08-06 | 50, 55SS | 2008-08-04 | 2008-08-04 | 5.5h | 0d |  | Analista; Jefe de Proyecto | 11h | 228.99 | 228.99 |
| 59 | 3.5.2 | 5.2 Realización y evaluación de las pruebas del sistema |  | 15h | 2008-08-06 | 2008-08-14 | 58 | 2008-08-04 | 2008-08-12 | 15h | 0d |  | Analista; Jefe de Proyecto | 15h | 312.26 | 312.26 |
| 60 | 3.6 | 6. Elaboración de los Manuales de Usuario |  | 50.5h | 2008-08-05 | 2008-08-13 | 50 | 2008-08-04 | 2008-08-12 | 50.5h | 0.94d |  | Jefe de Proyecto; Analista | 82h | 1,707.02 | 1,707.02 |
| 61 | 3.7 | **7. Definición de la Formación de Usuarios Finales** |  | 5.38d | 2008-07-15 | 2008-07-22 |  | 2008-07-11 | 2008-07-18 | 5.38d | 17d |  |  | 43h | 860 | 860 |
| 62 | 3.7.1 | 7.1 Definición del esquema de formación |  | 26h | 2008-07-15 | 2008-07-18 | 46 | 2008-07-11 | 2008-07-16 | 26h | 17d | 0d | Analista | 26h | 520 | 520 |
| 63 | 3.7.2 | 7.2 Especificación de los recursos y entornos de formación |  | 17h | 2008-07-18 | 2008-07-22 | 62 | 2008-07-16 | 2008-07-18 | 17h | 17d |  | Analista | 17h | 340 | 340 |
| 64 | 3.8 | **8. Construcción de los Componentes y Procedimientos de la Carga Inicial de Datos** |  | 9.88d | 2008-07-15 | 2008-07-29 |  | 2008-07-11 | 2008-07-25 | 10.25d | 12.38d |  |  | 135h | 2,360.65 | 2,360.65 |
| 65 | 3.8.1 | 8.1 Preparación y generación de código de los componentes y procedimientos de carga inicial de datos |  | 34h | 2008-07-15 | 2008-07-23 | 46 | 2008-07-11 | 2008-07-22 | 34h | 12.38d | 0d | Jefe de Proyecto; Analista; Programador [300%] | 85h | 1,319.79 | 1,319.79 |
| 66 | 3.8.2 | 8.2 Realización y evaluación de las pruebas de carga inicial de datos |  | 29h | 2008-07-23 | 2008-07-29 | 65 | 2008-07-22 | 2008-07-25 | 27h | 12.38d |  | Jefe de Proyecto; Analista | 50h | 1,040.87 | 1,040.87 |
| 67 | 3.9 | 9. Aprobación del Sistema de Información |  | 10h | 2008-08-14 | 2008-08-22 | 53, 56, 59, 60, 63, 66 | 2008-08-13 | 2008-08-14 | 10h | 0d |  | Jefe de Proyecto | 10h | 216.35 | 216.35 |
| 68 | 3.10 | Fin Proyecto | milestone | 0d | 2008-08-22 | 2008-08-22 | 67 | 2008-08-14 | 2008-08-14 | 0d | 0d |  |  |  |  |  |
