# p1seguimiento

Schedule from MS Project, 2010-05-03 to 2010-10-26, status date 2010-07-20, costs in €, A marks actual dates.
SRG

## Calendars

- Estándar: Mon-Fri 09:00-13:00, 15:00-19:00; Sat-Sun off.

## Resources

| Resource | Group | Rate | Cost per use |
| --- | --- | --- | --- |
| Coordinador | Organización | 22.68 |  |
| Analista | Personal contratado | 18.53 |  |
| Programador | Personal contratado | 12.02 |  |
| Secretario | Personal contratado | 8.65 |  |
| Operario de servicio técnico | Personal contratado |  | 100 |
| Usuario experto | Personal contratado | 9.62 |  |
| Miembro del grupo de trabajo | Organización | 14.53 |  |
| Sala de juntas |  | 40 |  |
| Proyector |  | 400 |  |
| Pizarra interactiva |  | 300 |  |
| Impresora láser color |  | 1700 |  |
| Servidor Central |  | 2000 |  |
| Red Hat Enterprise Linux 5 |  | 600 |  |
| Ordenador |  | 650 |  |

## Schedule

| ID | WBS | Task | Type | Duration | Start | Finish | Predecessors | Complete | Remaining | Baseline start | Baseline finish | Baseline duration | Total slack | Resources | Work | Actual work | Cost | Baseline cost | Actual cost |
| --- | --- | --- | --- | --- | --- | --- | --- | --- | --- | --- | --- | --- | --- | --- | --- | --- | --- | --- | --- |
| 1 | 1 | **Análisis** |  | 28.58d | 2010-05-03 A | 2010-06-10 A |  | 100% |  | 2010-05-03 | 2010-06-10 | 28.58d |  |  | 1022.34h | 1022.34h | 24,716.63 | 24,716.63 | 24,716.63 |
| 2 | 1.1 | Definición del sistema |  | 4.64d | 2010-05-03 A | 2010-05-07 A |  | 100% |  | 2010-05-03 | 2010-05-07 | 4.64d |  | Coordinador; Miembro del grupo de trabajo [400%]; Ordenador [600%]; Analista; Pizarra interactiva; Proyector; Red Hat Enterprise Linux 5; Impresora láser color; Servidor Central | 213.36h | 213.36h | 12,420.04 | 12,420.04 | 12,420.04 |
| 3 | 1.2 | Establecimiento de requisitos |  | 5.5d | 2010-05-07 A | 2010-05-17 A | 2 | 100% |  | 2010-05-07 | 2010-05-17 | 5.5d |  | Miembro del grupo de trabajo [200%]; Coordinador | 117h | 117h | 2,001.81 | 2,001.81 | 2,001.81 |
| 4 | 1.3 | Identificación de subsistemas |  | 4d | 2010-05-17 A | 2010-05-21 A | 3 | 100% |  | 2010-05-17 | 2010-05-21 | 4d |  | Miembro del grupo de trabajo [200%]; Analista | 94.5h | 94.5h | 1,501.03 | 1,501.03 | 1,501.03 |
| 5 | 1.4 | **Elaboración del modelo de datos** |  | 12.18d | 2010-05-17 A | 2010-06-02 A | 4SS | 100% |  | 2010-05-17 | 2010-06-02 | 12.18d |  |  | 183.76h | 183.76h | 2,946.28 | 2,946.28 | 2,946.28 |
| 6 | 1.4.1 | Elaboración de modelo conceptual y lógica de datos |  | 5.62d | 2010-05-17 A | 2010-05-26 A |  | 100% |  | 2010-05-17 | 2010-05-26 | 5.62d |  | Coordinador; Analista | 51h | 51h | 1,111.15 | 1,111.15 | 1,111.15 |
| 7 | 1.4.2 | Normalización |  | 2.43d | 2010-05-26 A | 2010-05-28 A | 6 | 100% |  | 2010-05-26 | 2010-05-28 | 2.43d |  | Miembro del grupo de trabajo [400%] | 77.76h | 77.76h | 1,129.95 | 1,129.95 | 1,129.95 |
| 8 | 1.4.3 | Especificación de necesidades de carga inicial |  | 2d | 2010-05-28 A | 2010-06-02 A | 7 | 100% |  | 2010-05-28 | 2010-06-02 | 2d |  | Secretario; Miembro del grupo de trabajo [300%] | 55h | 55h | 705.18 | 705.18 | 705.18 |
| 9 | 1.5 | Elaboración del modelo de procesos |  | 5.87d | 2010-05-17 A | 2010-05-26 A | 5SS | 100% |  | 2010-05-17 | 2010-05-26 | 5.87d |  | Coordinador; Analista; Miembro del grupo de trabajo [200%] | 100.46h | 100.46h | 1,508.28 | 1,508.28 | 1,508.28 |
| 10 | 1.6 | Definición de interfaz de usuario |  | 5.5d | 2010-05-17 A | 2010-05-26 A | 9SS | 100% |  | 2010-05-17 | 2010-05-26 | 5.5d |  | Usuario experto; Miembro del grupo de trabajo [300%]; Secretario | 88h | 88h | 803.85 | 803.85 | 803.85 |
| 11 | 1.7 | Análisis de consistencia y especificación de requisitos |  | 3.78d | 2010-06-02 A | 2010-06-08 A | 10, 9, 5, 4 | 100% |  | 2010-06-02 | 2010-06-08 | 3.78d |  | Analista; Coordinador; Miembro del grupo de trabajo [400%] | 142.44h | 142.44h | 2,364.13 | 2,364.13 | 2,364.13 |
| 12 | 1.8 | Especificación de plan de pruebas |  | 4.65d | 2010-06-02 A | 2010-06-09 A | 5, 10, 9, 4 | 100% |  | 2010-06-02 | 2010-06-09 | 4.65d |  | Usuario experto; Analista; Coordinador | 50.82h | 50.82h | 676.14 | 676.14 | 676.14 |
| 13 | 1.9 | Aprobación del análisis del SI |  | 1d | 2010-06-09 A | 2010-06-10 A | 12, 11 | 100% |  | 2010-06-09 | 2010-06-10 | 1d |  | Coordinador; Analista; Programador; Secretario | 32h | 32h | 495.07 | 495.07 | 495.07 |
| 14 | 1.10 | Análisis aprobado | milestone | 0d | 2010-06-10 A | 2010-06-10 A | 13 | 100% |  | 2010-06-10 | 2010-06-10 | 0d |  |  |  |  |  |  |  |
| 15 | 2 | **Diseño** |  | 48.97d | 2010-06-10 A | 2010-08-18 | 1 | 59% | 20.07d | 2010-06-10 | 2010-08-18 | 48.97d | 0d |  | 1371.88h | 936.98h | 23,103.54 | 23,103.54 | 15,481.14 |
| 16 | 2.1 | Definición de la arquitectura del sistema |  | 5.41d | 2010-06-10 A | 2010-06-17 A | 14 | 100% |  | 2010-06-10 | 2010-06-17 | 5.41d |  | Coordinador; Analista; Miembro del grupo de trabajo [400%] | 217.81h | 217.81h | 3,606.64 | 3,606.64 | 3,606.64 |
| 17 | 2.2 | Diseño de la arquitectura de soporte |  | 5.11d | 2010-06-17 A | 2010-06-24 A | 16 | 100% |  | 2010-06-17 | 2010-06-24 | 5.11d |  | Analista; Coordinador; Miembro del grupo de trabajo [200%] | 138.17h | 138.17h | 2,429.97 | 2,429.97 | 2,429.97 |
| 18 | 2.3 | **Diseño de la arquitectura de módulos de sistema** |  | 23.82d | 2010-06-17 A | 2010-07-21 | 17SS | 92% | 1.81d | 2010-06-17 | 2010-07-21 | 23.82d | 0d |  | 363.92h | 335.54h | 6,067.95 | 6,067.95 | 5,552.69 |
| 19 | 2.3.1 | Diseño de módulos del sistema |  | 8.43d | 2010-06-17 A | 2010-07-01 A |  | 100% |  | 2010-06-17 | 2010-07-01 | 8.43d |  | Miembro del grupo de trabajo [200%] | 134.88h | 134.88h | 1,959.98 | 1,959.98 | 1,959.98 |
| 20 | 2.3.2 | Diseño de comucación entre módulos |  | 9.04d | 2010-07-01 A | 2010-07-15 A | 19 | 100% |  | 2010-07-01 | 2010-07-15 | 9.04d |  | Miembro del grupo de trabajo [200%]; Coordinador | 136.64h | 136.64h | 2,542.56 | 2,542.56 | 2,542.56 |
| 21 | 2.3.3 | Revisión de la interfaz de usuario |  | 4.72d | 2010-07-15 A | 2010-07-21 | 20 | 64% | 1.68d | 2010-07-15 | 2010-07-21 | 4.72d | 0d | Coordinador; Analista; Usuario experto | 92.4h | 64.02h | 1,565.42 | 1,565.42 | 1,050.16 |
| 22 | 2.4 | **Diseño físico de datos** |  | 22.18d | 2010-06-17 A | 2010-07-20 | 18SS | 99% | 0.07d | 2010-06-17 | 2010-07-20 | 22.18d | 1.64d |  | 246.14h | 245.46h | 3,901.73 | 3,901.73 | 3,891.84 |
| 23 | 2.4.1 | Diseño del modelo físico de datos |  | 5d | 2010-06-17 A | 2010-06-30 A |  | 100% |  | 2010-06-17 | 2010-06-30 | 5d |  | Coordinador; Analista; Miembro del grupo de trabajo | 80.3h | 80.3h | 1,491.86 | 1,491.86 | 1,491.86 |
| 24 | 2.4.2 | Especificación de los caminos de acceso a los datos |  | 4.43d | 2010-07-02 A | 2010-07-14 A | 23FS+2d | 100% |  | 2010-07-02 | 2010-07-14 | 4.43d |  | Miembro del grupo de trabajo [300%] | 106.32h | 106.32h | 1,544.96 | 1,544.96 | 1,544.96 |
| 25 | 2.4.3 | Especificación de la distribución de datos |  | 3.72d | 2010-07-14 A | 2010-07-20 | 24FS-1d | 99% | 0.04d | 2010-07-14 | 2010-07-20 | 3.72d | 1.64d | Miembro del grupo de trabajo [200%] | 59.52h | 58.84h | 864.9 | 864.9 | 855.02 |
| 26 | 2.5 | Verificación y aceptación de la arquitectura del sistema |  | 1.43d | 2010-07-21 | 2010-07-23 | 22, 18, 17 |  |  | 2010-07-21 | 2010-07-23 | 1.43d | 0d | Coordinador; Miembro del grupo de trabajo [400%] | 57.2h |  | 924.46 | 924.46 |  |
| 27 | 2.6 | Generación y especificación de construcción |  | 6.95d | 2010-07-23 | 2010-08-03 | 26 |  |  | 2010-07-23 | 2010-08-03 | 6.95d | 0d | Coordinador; Analista | 91.68h |  | 1,889.07 | 1,889.07 |  |
| 28 | 2.7 | Diseño de migración y carga inicial de datos |  | 2.87d | 2010-07-23 | 2010-07-28 | 27SS |  |  | 2010-07-23 | 2010-07-28 | 2.87d | 0d | Miembro del grupo de trabajo [200%] | 45.92h |  | 667.28 | 667.28 |  |
| 29 | 2.8 | Especificación técnica del plan de prueba |  | 3.73d | 2010-07-23 | 2010-07-29 | 28SS |  |  | 2010-07-23 | 2010-07-29 | 3.73d | 0d | Miembro del grupo de trabajo [200%] | 59.68h |  | 867.23 | 867.23 |  |
| 30 | 2.9 | Establecimiento de requisitos de implantación |  | 12.52d | 2010-07-28 | 2010-08-17 | 29SS |  |  | 2010-07-28 | 2010-08-17 | 12.52d | 0d | Miembro del grupo de trabajo; Coordinador | 128.48h |  | 2,390.72 | 2,390.72 |  |
| 31 | 2.10 | Aprobación del diseño y SI |  | 1.43d | 2010-08-17 | 2010-08-18 | 30, 29, 28, 27 |  |  | 2010-08-17 | 2010-08-18 | 1.43d | 0d | Coordinador; Secretario | 22.88h |  | 358.51 | 358.51 |  |
| 32 | 2.11 | Diseño Aprobado | milestone | 0d | 2010-08-18 | 2010-08-18 | 31 |  |  | 2010-08-18 | 2010-08-18 | 0d | 0d |  |  |  |  |  |  |

| ID | WBS | Task | Type | Duration | Start | Finish | Predecessors | Complete | Remaining | Baseline start | Baseline finish | Baseline duration | Total slack | Constraint | Resources | Work | Actual work | Cost | Baseline cost | Actual cost |
| --- | --- | --- | --- | --- | --- | --- | --- | --- | --- | --- | --- | --- | --- | --- | --- | --- | --- | --- | --- | --- |
| 33 | 3 | **Implementación** |  | 31.6d | 2010-08-18 | 2010-10-01 | 15 |  |  | 2010-08-18 | 2010-10-01 | 31.6d | 0d |  |  | 362.64h |  | 4,136.17 | 4,136.17 |  |
| 34 | 3.1 | Preparación del entorno de generación y contrucción |  | 3.13d | 2010-08-18 | 2010-08-23 | 32 |  |  | 2010-08-18 | 2010-08-23 | 3.13d | 0d |  | Programador; Miembro del grupo de trabajo | 50.08h |  | 664.82 | 664.82 |  |
| 35 | 3.2 | Generación del código de los componentes y procedimientos |  | 9.3d | 2010-09-10 | 2010-09-24 | 34 |  |  | 2010-09-10 | 2010-09-24 | 9.3d | 5d |  | Programador | 74.4h |  | 894.23 | 894.23 |  |
| 36 | 3.3 | Elaboración del manual de usuario |  | 13.73d | 2010-08-18 | 2010-09-07 | 34SS |  |  | 2010-08-18 | 2010-09-07 | 13.73d | 0d |  | Programador; Secretario | 169.6h |  | 1,753.08 | 1,753.08 |  |
| 37 | 3.4 | Definición de la formación de usuarios finales |  | 3.57d | 2010-09-07 | 2010-09-10 | 36SS |  |  | 2010-09-07 | 2010-09-10 | 3.57d | 0d |  | Programador | 28.56h |  | 343.27 | 343.27 |  |
| 38 | 3.5 | Construcción de los componentes y procedimientos de carga inicial de datos |  | 5d | 2010-09-24 | 2010-10-01 | 37SS |  |  | 2010-09-24 | 2010-10-01 | 5d | 0d |  | Programador | 40h |  | 480.77 | 480.77 |  |
| 39 | 3.6 | Implementación aprobada | milestone | 0d | 2010-10-01 | 2010-10-01 | 38 |  |  | 2010-10-01 | 2010-10-01 | 0d | 0d |  |  |  |  |  |  |  |
| 40 | 4 | **Pruebas** |  | 17.37d | 2010-10-01 | 2010-10-26 | 33 |  |  | 2010-10-01 | 2010-10-26 | 17.37d | 0d |  |  | 253.92h |  | 4,085.36 | 4,085.36 |  |
| 41 | 4.1 | Ejecución de las pruebas unitarias |  | 4.5d | 2010-10-01 | 2010-10-07 |  |  |  | 2010-10-01 | 2010-10-07 | 4.5d | 0d |  | Usuario experto; Coordinador | 64h |  | 1,033.58 | 1,033.58 |  |
| 42 | 4.2 | Ejecución de las pruebas de integración |  | 5.45d | 2010-10-07 | 2010-10-14 | 41SS |  |  | 2010-10-07 | 2010-10-14 | 5.45d | 0d |  | Usuario experto; Coordinador | 73.12h |  | 1,180.87 | 1,180.87 |  |
| 43 | 4.3 | Ejecución de las pruebas del sistema |  | 6.55d | 2010-10-13 | 2010-10-22 | 42SS |  |  | 2010-10-13 | 2010-10-22 | 6.55d | 0d |  | Usuario experto; Coordinador | 84.8h |  | 1,369.5 | 1,369.5 |  |
| 44 | 4.4 | Aprobación del SI |  | 2.5d | 2010-10-22 | 2010-10-26 | 43, 41, 42 |  |  | 2010-10-22 | 2010-10-26 | 2.5d | 0d |  | Secretario; Coordinador | 32h |  | 501.41 | 501.41 |  |
| 45 | 4.5 | Proyecto Finalizado | milestone | 0d | 2010-10-26 | 2010-10-26 | 44 |  |  | 2010-10-26 | 2010-10-26 | 0d | 0d |  |  |  |  |  |  |  |
| 46 | 5 | **Reunión del grupo de trabajo** |  | 65.38d | 2010-05-03 A | 2010-08-02 |  | 86% | 9.34d | 2010-05-03 | 2010-08-02 | 65.38d | 61.15d |  |  | 225h | 189h | 4,681.64 | 4,681.64 | 3,956.79 |
| 47 | 5.1 | Reunión del grupo de trabajo 1 |  | 3h | 2010-05-03 A | 2010-05-03 A |  | 100% |  | 2010-05-03 | 2010-05-03 | 3h |  | start no earlier than 2010-05-03 | Miembro del grupo de trabajo [400%]; Coordinador; Sala de juntas | 9h | 9h | 231.65 | 231.65 | 231.65 |
| 48 | 5.2 | Reunión del grupo de trabajo 2 |  | 3h | 2010-05-10 A | 2010-05-10 A |  | 100% |  | 2010-05-10 | 2010-05-10 | 3h |  | start no earlier than 2010-05-10 | Miembro del grupo de trabajo [400%]; Coordinador; Sala de juntas | 9h | 9h | 231.65 | 231.65 | 231.65 |
| 49 | 5.3 | Reunión del grupo de trabajo 3 |  | 3h | 2010-05-17 A | 2010-05-17 A |  | 100% |  | 2010-05-17 | 2010-05-17 | 3h |  | start no earlier than 2010-05-17 | Miembro del grupo de trabajo [400%]; Coordinador; Sala de juntas | 9h | 9h | 231.65 | 231.65 | 231.65 |
| 50 | 5.4 | Reunión del grupo de trabajo 4 |  | 3h | 2010-05-25 A | 2010-05-25 A |  | 100% |  | 2010-05-25 | 2010-05-25 | 3h |  | start no earlier than 2010-05-24 | Miembro del grupo de trabajo [400%]; Coordinador; Sala de juntas | 18h | 18h | 362.43 | 362.43 | 362.43 |
| 51 | 5.5 | Reunión del grupo de trabajo 5 |  | 3h | 2010-06-01 A | 2010-06-01 A |  | 100% |  | 2010-06-01 | 2010-06-01 | 3h |  | start no earlier than 2010-05-31 | Miembro del grupo de trabajo [400%]; Coordinador; Sala de juntas | 18h | 18h | 362.43 | 362.43 | 362.43 |
| 52 | 5.6 | Reunión del grupo de trabajo 6 |  | 3h | 2010-06-07 A | 2010-06-07 A |  | 100% |  | 2010-06-07 | 2010-06-07 | 3h |  | start no earlier than 2010-06-07 | Miembro del grupo de trabajo [400%]; Coordinador; Sala de juntas | 18h | 18h | 362.43 | 362.43 | 362.43 |
| 53 | 5.7 | Reunión del grupo de trabajo 7 |  | 3h | 2010-06-14 A | 2010-06-14 A |  | 100% |  | 2010-06-14 | 2010-06-14 | 3h |  | start no earlier than 2010-06-14 | Miembro del grupo de trabajo [400%]; Coordinador; Sala de juntas | 18h | 18h | 362.43 | 362.43 | 362.43 |
| 54 | 5.8 | Reunión del grupo de trabajo 8 |  | 3h | 2010-06-21 A | 2010-06-21 A |  | 100% |  | 2010-06-21 | 2010-06-21 | 3h |  | start no earlier than 2010-06-21 | Miembro del grupo de trabajo [400%]; Coordinador; Sala de juntas | 18h | 18h | 362.43 | 362.43 | 362.43 |
| 55 | 5.9 | Reunión del grupo de trabajo 9 |  | 3h | 2010-06-28 A | 2010-06-28 A |  | 100% |  | 2010-06-28 | 2010-06-28 | 3h |  | start no earlier than 2010-06-28 | Miembro del grupo de trabajo [400%]; Coordinador; Sala de juntas | 18h | 18h | 362.43 | 362.43 | 362.43 |
| 56 | 5.10 | Reunión del grupo de trabajo 10 |  | 3h | 2010-07-05 A | 2010-07-05 A |  | 100% |  | 2010-07-05 | 2010-07-05 | 3h |  | start no earlier than 2010-07-05 | Miembro del grupo de trabajo [400%]; Coordinador; Sala de juntas | 18h | 18h | 362.43 | 362.43 | 362.43 |
| 57 | 5.11 | Reunión del grupo de trabajo 11 |  | 3h | 2010-07-12 A | 2010-07-12 A |  | 100% |  | 2010-07-12 | 2010-07-12 | 3h |  | start no earlier than 2010-07-12 | Miembro del grupo de trabajo [400%]; Coordinador; Sala de juntas | 18h | 18h | 362.43 | 362.43 | 362.43 |
| 58 | 5.12 | Reunión del grupo de trabajo 12 |  | 3h | 2010-07-19 A | 2010-07-19 A |  | 100% |  | 2010-07-19 | 2010-07-19 | 3h |  | start no earlier than 2010-07-19 | Miembro del grupo de trabajo [400%]; Coordinador; Sala de juntas | 18h | 18h | 362.43 | 362.43 | 362.43 |
| 59 | 5.13 | Reunión del grupo de trabajo 13 |  | 3h | 2010-07-26 | 2010-07-26 |  |  |  | 2010-07-26 | 2010-07-26 | 3h | 66.15d | start no earlier than 2010-07-26 | Miembro del grupo de trabajo [400%]; Coordinador; Sala de juntas | 18h |  | 362.43 | 362.43 |  |
| 60 | 5.14 | Reunión del grupo de trabajo 14 |  | 3h | 2010-08-02 | 2010-08-02 |  |  |  | 2010-08-02 | 2010-08-02 | 3h | 61.15d | start no earlier than 2010-08-02 | Miembro del grupo de trabajo [400%]; Coordinador; Sala de juntas | 18h |  | 362.43 | 362.43 |  |
