# P1 - PGSI

Schedule from MS Project, 2008-04-14 to 2008-07-14.
Guerrero

## Calendars

- Estándar: Mon-Fri 09:00-13:00, 15:00-19:00; Sat-Sun off.

## Resources

| Resource | Group | Rate | Cost per use |
| --- | --- | --- | --- |
| Jefe de Proyecto | Dirección | 21.63 |  |
| Analista | Equipo de diseño | 20 |  |
| Programador | Equipo de desarrollo | 12 |  |
| Programador Auxiliar | Equipo de desarrollo | 14 |  |
| Equipos informaticos |  | 2000 |  |
| Servicio técnico |  |  | 100 |

## Schedule

| ID | WBS | Task | Type | Duration | Start | Finish | Predecessors | Total slack | Free slack |
| --- | --- | --- | --- | --- | --- | --- | --- | --- | --- |
| 1 | 1 | **Análisis** |  | 19.62d | 2008-04-14 | 2008-05-09 |  | 0d |  |
| 2 | 1.1 | **1. Definición del sistema** |  | 6.12d | 2008-04-14 | 2008-04-22 |  | 0d |  |
| 3 | 1.1.1 | 1.1 Determinación del alcance del sistema |  | 33h | 2008-04-14 | 2008-04-18 |  | 0d |  |
| 4 | 1.1.2 | 1.2 Identificación del entorno tecnológico |  | 8h | 2008-04-21 | 2008-04-22 | 3FS+1d | 0d |  |
| 5 | 1.2 | **2. Establecimiento de requisitos** |  | 3.12d | 2008-04-22 | 2008-04-25 |  | 0d |  |
| 6 | 1.2.1 | 2.1 Obtención y análisis de requisitos |  | 25h | 2008-04-22 | 2008-04-25 | 4 | 0d |  |
| 7 | 1.2.2 | 2.2 Validación de los requisitos |  | 8h | 2008-04-24 | 2008-04-25 | 6FS-1d | 0d |  |
| 8 | 1.3 | **3. Identificación de Subsistemas de análisis** |  | 3.62d | 2008-04-25 | 2008-04-30 |  | 1.88d |  |
| 9 | 1.3.1 | 3.1 Determinación de subsistemas de análisis |  | 14h | 2008-04-25 | 2008-04-28 | 7 | 1.88d | 0d |
| 10 | 1.3.2 | 3.2 Integración de subsistemas de análisis |  | 15h | 2008-04-29 | 2008-04-30 | 9 | 1.88d |  |
| 11 | 1.4 | **4. Elaboración del Modelo de Datos** |  | 5.5d | 2008-04-25 | 2008-05-02 |  | 0d |  |
| 12 | 1.4.1 | 4.1 Elaboración del modelo conceptual y lógico de datos |  | 24h | 2008-04-25 | 2008-04-30 | 7 | 0d |  |
| 13 | 1.4.2 | 4.2 Normalización |  | 10h | 2008-04-30 | 2008-05-01 | 12 | 0d |  |
| 14 | 1.4.3 | 4.3 Especificación de necesidades de carga inicial |  | 10h | 2008-05-01 | 2008-05-02 | 13 | 0d |  |
| 15 | 1.5 | 5. Elaboración del Modelo de Procesos |  | 24h | 2008-04-25 | 2008-04-30 | 7 | 2.5d |  |
| 16 | 1.6 | **6. Definición de Interfaces de Usuario** |  | 2d | 2008-04-25 | 2008-04-29 |  | 3.5d |  |
| 17 | 1.6.1 | 6.1 Especificación de principios generales de la interfaz |  | 8h | 2008-04-25 | 2008-04-28 | 7 | 3.5d | 0d |
| 18 | 1.6.2 | 6.2 Identificación de perfiles y diálogos |  | 8h | 2008-04-28 | 2008-04-29 | 17 | 3.5d |  |
| 19 | 1.7 | 7. Análisis de consistencia y especificación de requisitos |  | 22h | 2008-05-02 | 2008-05-07 | 10, 14, 15, 18 | 1d |  |
| 20 | 1.8 | **8. Especificación del Plan de Pruebas** |  | 3.75d | 2008-05-02 | 2008-05-08 |  | 0d |  |
| 21 | 1.8.1 | 8.1 Definición del alcance y requisitos de las pruebas |  | 16h | 2008-05-02 | 2008-05-06 | 10, 14, 15, 18 | 0d |  |
| 22 | 1.8.2 | 8.2 Definición de las pruebas de aceptación del sistema |  | 14h | 2008-05-06 | 2008-05-08 | 21 | 0d |  |
| 23 | 1.9 | 9. Aprobación del análisis del Sistema de Información |  | 9h | 2008-05-08 | 2008-05-09 | 19, 22 | 0d |  |
| 24 | 1.10 | Fin Análisis | milestone | 0d | 2008-05-09 | 2008-05-09 | 23 | 0d |  |

| ID | WBS | Task | Type | Duration | Start | Finish | Predecessors | Total slack | Free slack |
| --- | --- | --- | --- | --- | --- | --- | --- | --- | --- |
| 25 | 2 | **Diseño** |  | 24.38d | 2008-05-09 | 2008-06-12 | 1 | 0d |  |
| 26 | 2.1 | 1. Definición de la Arquitectura del Sistema |  | 26h | 2008-05-09 | 2008-05-14 | 24 | 0d |  |
| 27 | 2.2 | 2. Diseño de arquitectura de soporte |  | 38h | 2008-05-14 | 2008-05-21 | 26 | 5.5d |  |
| 28 | 2.3 | **3. Diseño de arquitectura de módulos del sistema** |  | 10.25d | 2008-05-14 | 2008-05-29 |  | 0d |  |
| 29 | 2.3.1 | 3.1 Diseño de módulos del sistema |  | 46h | 2008-05-14 | 2008-05-22 | 26 | 0d |  |
| 30 | 2.3.2 | 3.2 Diseño de la comunicación entre módulos |  | 28h | 2008-05-22 | 2008-05-28 | 29 | 0d |  |
| 31 | 2.3.3 | 3.3 Revisión de la interfaz de usuario |  | 8h | 2008-05-28 | 2008-05-29 | 30 | 0d |  |
| 32 | 2.4 | **4. Diseño físico de datos** |  | 9.62d | 2008-05-14 | 2008-05-28 |  | 0.62d |  |
| 33 | 2.4.1 | 4.1 Diseño del modelo físico de datos |  | 35h | 2008-05-14 | 2008-05-21 | 26 | 0.62d | 0d |
| 34 | 2.4.2 | 4.2 Especificación de los caminos de acceso a los datos |  | 16h | 2008-05-21 | 2008-05-23 | 33 | 0.62d | 0d |
| 35 | 2.4.3 | 4.3 Especificación de la distribución de datos |  | 26h | 2008-05-23 | 2008-05-28 | 34 | 0.62d |  |
| 36 | 2.5 | 5. Verificación y aceptación de la arquitectura del sistema |  | 8h | 2008-05-29 | 2008-05-30 | 27, 31, 35 | 0d |  |
| 37 | 2.6 | 6. Generación de especificaciones de construcción |  | 37h | 2008-05-30 | 2008-06-05 | 36 | 4.25d |  |
| 38 | 2.7 | **7. Diseño de la migración y carga inicial de datos** |  | 8.88d | 2008-05-30 | 2008-06-11 |  | 0d |  |
| 39 | 2.7.1 | 7.1 Especificación del entorno de carga inicial |  | 17h | 2008-05-30 | 2008-06-03 | 36 | 0d |  |
| 40 | 2.7.2 | 7.2 Diseño de procedimientos de carga inicial |  | 27h | 2008-06-03 | 2008-06-06 | 39 | 0d |  |
| 41 | 2.7.3 | 7.3 Diseño detallado de componentes de carga inicial |  | 27h | 2008-06-06 | 2008-06-11 | 40 | 0d |  |
| 42 | 2.8 | 8. Especificación técnica del plan de pruebas |  | 16h | 2008-05-30 | 2008-06-03 | 36 | 6.88d |  |
| 43 | 2.9 | **9. Establecimiento de los requisitos de implantación** |  | 2d | 2008-05-30 | 2008-06-03 |  | 6.88d |  |
| 44 | 2.9.1 | 9.1 Especificación de requisitos de documentación de usuario |  | 8h | 2008-05-30 | 2008-06-02 | 36 | 7.88d |  |
| 45 | 2.9.2 | 9.2 Especificación de requisitos de implantación |  | 16h | 2008-05-30 | 2008-06-03 | 36 | 6.88d |  |
| 46 | 2.10 | 10. Aprobación del diseño del Sistema de Información |  | 8h | 2008-06-12 | 2008-06-12 | 37, 41, 42, 44, 45 | 0d |  |
| 47 | 2.11 | Fin Diseño | milestone | 0d | 2008-06-12 | 2008-06-12 | 46 | 0d |  |
| 48 | 3 | **Construcción** |  | 21.75d | 2008-06-13 | 2008-07-14 | 25 | 0d |  |
| 49 | 3.1 | 1. Preparación del entorno de generación y construcción |  | 36h | 2008-06-13 | 2008-06-19 | 47 | 0d |  |
| 50 | 3.2 | 2. Generación del código de los componentes y procedimientos |  | 87h | 2008-06-19 | 2008-07-04 | 49 | 0d |  |

| ID | WBS | Task | Type | Duration | Start | Finish | Predecessors | Total slack | Free slack |
| --- | --- | --- | --- | --- | --- | --- | --- | --- | --- |
| 51 | 3.3 | **3. Ejecución de las Pruebas Unitarias** |  | 3.5d | 2008-07-04 | 2008-07-09 |  | 1.62d |  |
| 52 | 3.3.1 | 3.1 Preparación del entorno de pruebas unitarias |  | 11h | 2008-07-04 | 2008-07-07 | 50 | 1.62d | 0d |
| 53 | 3.3.2 | 3.2 Realización y evaluación de las pruebas unitarias |  | 17h | 2008-07-07 | 2008-07-09 | 52, 56FF | 1.62d |  |
| 54 | 3.4 | **4. Ejecución de las Pruebas de Integración** |  | 3.38d | 2008-07-04 | 2008-07-09 |  | 1.75d |  |
| 55 | 3.4.1 | 4.1 Preparación del entorno de las pruebas de integración |  | 10h | 2008-07-04 | 2008-07-07 | 50, 52SS | 1.75d | 0d |
| 56 | 3.4.2 | 4.2 Realización y evaluación del resultado de las pruebas de integración |  | 17h | 2008-07-07 | 2008-07-09 | 55, 59FF | 1.75d | 0.12d |
| 57 | 3.5 | **5. Ejecución de las Pruebas del Sistema** |  | 3.25d | 2008-07-04 | 2008-07-09 |  | 1.88d |  |
| 58 | 3.5.1 | 5.1 Preparación del entorno de las pruebas del sistema |  | 11h | 2008-07-04 | 2008-07-07 | 50, 55SS | 1.88d | 0d |
| 59 | 3.5.2 | 5.2 Realización y evaluación de las pruebas del sistema |  | 15h | 2008-07-07 | 2008-07-09 | 58 | 1.88d | 0.12d |
| 60 | 3.6 | 6. Elaboración de los Manuales de Usuario |  | 41h | 2008-07-04 | 2008-07-11 | 50 | 0d |  |
| 61 | 3.7 | **7. Definición de la Formación de Usuarios Finales** |  | 5.38d | 2008-06-13 | 2008-06-20 |  | 15.12d |  |
| 62 | 3.7.1 | 7.1 Definición del esquema de formación |  | 26h | 2008-06-13 | 2008-06-18 | 46 | 15.12d | 0d |
| 63 | 3.7.2 | 7.2 Especificación de los recursos y entornos de formación |  | 17h | 2008-06-18 | 2008-06-20 | 62 | 15.12d |  |
| 64 | 3.8 | **8. Construcción de los Componentes y Procedimientos de la Carga Inicial de Datos** |  | 5.25d | 2008-06-13 | 2008-06-20 |  | 15.25d |  |
| 65 | 3.8.1 | 8.1 Preparación y generación de código de los componentes y procedimientos de carga inicial de datos |  | 17h | 2008-06-13 | 2008-06-17 | 46 | 15.25d | 0d |
| 66 | 3.8.2 | 8.2 Realización y evaluación de las pruebas de carga inicial de datos |  | 25h | 2008-06-17 | 2008-06-20 | 65 | 15.25d |  |
| 67 | 3.9 | 9. Aprobación del Sistema de Información |  | 10h | 2008-07-11 | 2008-07-14 | 53, 56, 59, 60, 63, 66 | 0d |  |
| 68 | 3.10 | Fin Proyecto | milestone | 0d | 2008-07-14 | 2008-07-14 | 67 | 0d |  |
