# P1 con sobreasignaciones resueltas y delimitaciones

Schedule from MS Project, 2009-03-23 to 2011-01-31, costs in €.

## Calendars

- Estándar: Mon-Fri 09:00-13:00, 15:00-19:00; Sat-Sun off.
- Calendario Reuniones con el Director de la Empresa: Mon-Fri 19:00-20:00; Sat-Sun off. Exceptions (off unless hours are given): 2009-05-01, 2009-08-15, 2009-10-12, 2009-11-01, 2010-05-01, 2010-08-15, 2010-10-12, 2010-11-01.

## Resources

| Resource | Group | Unit | Rate | Cost per use |
| --- | --- | --- | --- | --- |
| Director Empresa | Directivos |  |  |  |
| Jefe de Proyecto | Informáticos |  | 16.83 |  |
| Analista | Informáticos |  | 15 |  |
| Consultor | Expertos |  | 20 |  |
| Programador | Informáticos |  | 8 |  |
| Servidor |  |  | 1200 | 30 |
| Cable de Red |  | metro | 0.61 |  |

## Schedule

| ID | WBS | Task | Type | Duration | Start | Finish | Predecessors | Baseline start | Baseline finish | Baseline duration | Total slack | Free slack | Constraint | Calendar | Resources | Work | Cost | Baseline cost |
| --- | --- | --- | --- | --- | --- | --- | --- | --- | --- | --- | --- | --- | --- | --- | --- | --- | --- | --- |
| 1 | 1 | **PS GestPerson** |  | 486d | 2009-03-23 | 2011-01-31 |  | 2009-03-23 | 2011-01-31 | 486d | 0d |  |  |  |  | 14211h | 205,672.37 | 205,672.37 |
| 2 | 1.1 | **Reunion director** |  | 54d | 2009-04-15 | 2010-12-15 |  | 2009-04-15 | 2010-12-15 | 54d | 4d |  |  | Calendario Reuniones con el Director de la Empresa |  | 22h | 185.1 | 185.1 |
| 3 | 1.1.1 | Reunión Director Empresa 1 |  | 1h | 2009-04-15 | 2009-04-15 |  | 2009-04-15 | 2009-04-15 | 1h | 57.88d |  | start no earlier than 2009-04-15 | Calendario Reuniones con el Director de la Empresa | Director Empresa; Jefe de Proyecto | 2h | 16.83 | 16.83 |
| 4 | 1.1.2 | Reunión Director Empresa 2 |  | 1h | 2009-06-15 | 2009-06-15 |  | 2009-06-15 | 2009-06-15 | 1h | 52.62d |  | start no earlier than 2009-06-15 | Calendario Reuniones con el Director de la Empresa | Director Empresa; Jefe de Proyecto | 2h | 16.83 | 16.83 |
| 5 | 1.1.3 | Reunión Director Empresa 3 |  | 1h | 2009-08-17 | 2009-08-17 |  | 2009-08-17 | 2009-08-17 | 1h | 47d |  | start no earlier than 2009-08-15 | Calendario Reuniones con el Director de la Empresa | Director Empresa; Jefe de Proyecto | 2h | 16.83 | 16.83 |
| 6 | 1.1.4 | Reunión Director Empresa 4 |  | 1h | 2009-10-15 | 2009-10-15 |  | 2009-10-15 | 2009-10-15 | 1h | 41.75d |  | start no earlier than 2009-10-15 | Calendario Reuniones con el Director de la Empresa | Director Empresa; Jefe de Proyecto | 2h | 16.83 | 16.83 |
| 7 | 1.1.5 | Reunión Director Empresa 5 |  | 1h | 2009-12-15 | 2009-12-15 |  | 2009-12-15 | 2009-12-15 | 1h | 36.38d |  | start no earlier than 2009-12-15 | Calendario Reuniones con el Director de la Empresa | Director Empresa; Jefe de Proyecto | 2h | 16.83 | 16.83 |
| 8 | 1.1.6 | Reunión Director Empresa 6 |  | 1h | 2010-02-15 | 2010-02-15 |  | 2010-02-15 | 2010-02-15 | 1h | 30.88d |  | start no earlier than 2010-02-15 | Calendario Reuniones con el Director de la Empresa | Director Empresa; Jefe de Proyecto | 2h | 16.83 | 16.83 |
| 9 | 1.1.7 | Reunión Director Empresa 7 |  | 1h | 2010-04-15 | 2010-04-15 |  | 2010-04-15 | 2010-04-15 | 1h | 25.5d |  | start no earlier than 2010-04-15 | Calendario Reuniones con el Director de la Empresa | Director Empresa; Jefe de Proyecto | 2h | 16.83 | 16.83 |
| 10 | 1.1.8 | Reunión Director Empresa 8 |  | 1h | 2010-06-15 | 2010-06-15 |  | 2010-06-15 | 2010-06-15 | 1h | 20.12d |  | start no earlier than 2010-06-15 | Calendario Reuniones con el Director de la Empresa | Director Empresa; Jefe de Proyecto | 2h | 16.83 | 16.83 |
| 11 | 1.1.9 | Reunión Director Empresa 9 |  | 1h | 2010-08-16 | 2010-08-16 |  | 2010-08-16 | 2010-08-16 | 1h | 14.62d |  | start no earlier than 2010-08-15 | Calendario Reuniones con el Director de la Empresa | Director Empresa; Jefe de Proyecto | 2h | 16.83 | 16.83 |
| 12 | 1.1.10 | Reunión con el Director de la Empresa 10 |  | 1h | 2010-10-15 | 2010-10-15 |  | 2010-10-15 | 2010-10-15 | 1h | 9.25d |  | start no earlier than 2010-10-15 | Calendario Reuniones con el Director de la Empresa | Director Empresa; Jefe de Proyecto | 2h | 16.83 | 16.83 |
| 13 | 1.1.11 | Reunión con el Director de la Empresa 11 |  | 1h | 2010-12-15 | 2010-12-15 |  | 2010-12-15 | 2010-12-15 | 1h | 4d |  | start no earlier than 2010-12-15 | Calendario Reuniones con el Director de la Empresa | Director Empresa; Jefe de Proyecto | 2h | 16.83 | 16.83 |
| 14 | 1.2 | **Análisis de Requisitos** |  | 126.56d | 2009-03-23 | 2009-09-15 |  | 2009-03-23 | 2009-09-15 | 126.56d | 85.77d | 0d |  |  |  | 3584h | 57,595.38 | 57,595.38 |
| 15 | 1.2.1 | **Definir modelo del sistema** |  | 42d | 2009-03-23 | 2009-05-19 |  | 2009-03-23 | 2009-05-19 | 42d | 84.77d | 0d |  |  |  | 1136h | 17,595.38 | 17,595.38 |
| 16 | 1.2.1.1 | Identificación del Entorno Tecnológico |  | 25.88d | 2009-03-23 | 2009-04-23 |  | 2009-03-23 | 2009-04-23 | 25.88d | 85.5d | 0d |  |  | Jefe de Proyecto; Analista [200%] | 576h | 8,990.77 | 8,990.77 |
| 17 | 1.2.1.2 | Especificación de Estándares y Normas |  | 18.25d | 2009-04-24 | 2009-05-19 | 16 | 2009-04-24 | 2009-05-19 | 18.25d | 84.77d | 0d |  |  | Jefe de Proyecto [50%]; Analista [200%] | 340h | 5,224.23 | 5,224.23 |
| 18 | 1.2.1.3 | determinar usuarios finales |  | 11.75d | 2009-05-05 | 2009-05-19 | 17FF | 2009-05-05 | 2009-05-19 | 11.75d | 80.14d |  |  |  | Jefe de Proyecto [50%]; Analista [200%] | 220h | 3,380.38 | 3,380.38 |
| 19 | 1.2.2 | **Establecimiento de Requisitos** |  | 46.56d | 2009-05-20 | 2009-07-23 | 15 | 2009-05-20 | 2009-07-23 | 46.56d | 84.77d | 0d |  |  |  | 1080h | 18,000 | 18,000 |
| 20 | 1.2.2.1 | Obtención de Requisitos |  | 23d | 2009-05-20 | 2009-06-19 |  | 2009-05-20 | 2009-06-19 | 23d | 84.77d | 0d |  |  | Consultor; Analista [200%] | 552h | 9,200 | 9,200 |
| 21 | 1.2.2.2 | Analizar requisitos |  | 22d | 2009-06-23 | 2009-07-23 | 20FS+2d | 2009-06-23 | 2009-07-23 | 22d | 85.94d |  |  |  | Consultor; Analista [200%] | 528h | 8,800 | 8,800 |
| 22 | 1.2.3 | **Determinar el modelo de interfaz** |  | 38d | 2009-07-23 | 2009-09-15 | 19 | 2009-07-23 | 2009-09-15 | 38d | 85.94d | 0d |  |  |  | 888h | 14,800 | 14,800 |
| 23 | 1.2.3.1 | Especificar de requisitos |  | 17d | 2009-07-23 | 2009-08-17 |  | 2009-07-23 | 2009-08-17 | 17d | 85.94d | 0d |  |  | Consultor; Analista [200%] | 408h | 6,800 | 6,800 |
| 24 | 1.2.3.2 | Especificación del Comportamiento Dinámico de la Interfaz |  | 20d | 2009-08-18 | 2009-09-15 | 23FS+1d | 2009-08-18 | 2009-09-15 | 20d | 81.58d |  |  |  | Consultor; Analista [200%] | 480h | 8,000 | 8,000 |
| 25 | 1.2.4 | Análisis de Casos de Uso |  | 17d | 2009-07-09 | 2009-08-03 | 19FS-10d | 2009-07-09 | 2009-08-03 | 17d | 98.58d | 0d |  |  | Analista [200%] | 272h | 4,080 | 4,080 |
| 26 | 1.2.5 | Análisis de Clases |  | 13d | 2009-08-04 | 2009-08-21 | 25FS+1d | 2009-08-04 | 2009-08-21 | 13d | 98.58d | 17.19d |  |  | Analista [200%] | 208h | 3,120 | 3,120 |
| 27 | 1.2.6 | Fin analisis de requisitos | milestone | 0d | 2009-09-15 | 2009-09-15 | 26, 22 | 2009-09-15 | 2009-09-15 | 0d | 81.58d |  |  |  |  |  |  |  |

| ID | WBS | Task | Type | Duration | Start | Finish | Predecessors | Baseline start | Baseline finish | Baseline duration | Total slack | Free slack | Resources | Work | Cost | Baseline cost |
| --- | --- | --- | --- | --- | --- | --- | --- | --- | --- | --- | --- | --- | --- | --- | --- | --- |
| 28 | 1.3 | **Diseño** |  | 76.42d | 2009-09-15 | 2009-12-30 | 14 | 2009-09-15 | 2009-12-30 | 76.42d | 85.2d | 0d |  | 4041h | 63,902.4 | 63,902.4 |
| 29 | 1.3.1 | **Definir arquitectura** |  | 65.56d | 2009-09-15 | 2009-12-16 |  | 2009-09-15 | 2009-12-16 | 65.56d | 85.2d | 0d |  | 1516h | 22,740 | 22,740 |
| 30 | 1.3.1.1 | Identificar requisitos de diseño |  | 44.62d | 2009-09-15 | 2009-11-18 |  | 2009-09-15 | 2009-11-18 | 44.62d | 85.2d | 0d | Analista [200%] | 714h | 10,710 | 10,710 |
| 31 | 1.3.1.2 | Especificar estandares |  | 30.19d | 2009-09-15 | 2009-10-28 | 30SS | 2009-09-15 | 2009-10-28 | 30.19d | 119.58d |  | Analista [200%] | 483h | 7,245 | 7,245 |
| 32 | 1.3.1.3 | Especificar requisitos de seguridad |  | 19.94d | 2009-11-18 | 2009-12-16 | 30 | 2009-11-18 | 2009-12-16 | 19.94d | 85.2d |  | Analista [200%] | 319h | 4,785 | 4,785 |
| 33 | 1.3.2 | Diseño de Casos de Uso Reales |  | 15.5d | 2009-09-15 | 2009-10-07 | 29SS | 2009-09-15 | 2009-10-07 | 15.5d | 131.31d | 0d | Consultor; Analista [200%] | 372h | 6,200 | 6,200 |
| 34 | 1.3.3 | Diseño de Clases |  | 16.19d | 2009-09-15 | 2009-10-07 | 33SS | 2009-09-15 | 2009-10-07 | 16.19d | 131.25d | 0d | Consultor; Analista [200%] | 259h | 4,532.5 | 4,532.5 |
| 35 | 1.3.4 | Diseño de Migración y Carga Inicial de Datos |  | 15d | 2009-10-07 | 2009-10-28 | 34 | 2009-10-07 | 2009-10-28 | 15d | 130.31d | 47.86d | Jefe de Proyecto; Analista [400%] | 565h | 8,681.44 | 8,681.44 |
| 36 | 1.3.5 | **Establecimiento de Requisitos de Implantación** |  | 27.25d | 2009-11-23 | 2009-12-30 | 29FS-2.5% | 2009-11-23 | 2009-12-30 | 27.25d | 85.2d | 0d |  | 729h | 12,065.77 | 12,065.77 |
| 37 | 1.3.5.1 | Especificación de Requisitos de Documentación de Usuario |  | 19.69d | 2009-11-23 | 2009-12-18 |  | 2009-11-23 | 2009-12-18 | 19.69d | 85.06d | 0d | Jefe de Proyecto; Consultor; Analista [200%] | 586h | 9,790.14 | 9,790.14 |
| 38 | 1.3.5.2 | Especificación de Requisitos de Implantación |  | 9.69d | 2009-12-18 | 2009-12-30 | 37 | 2009-12-18 | 2009-12-30 | 9.69d | 85.06d |  | Jefe de Proyecto; Analista | 143h | 2,275.62 | 2,275.62 |
| 39 | 1.3.6 | Especificación Técnica de Plan de Pruebas |  | 13.38d | 2009-09-15 | 2009-10-02 | 34SS | 2009-09-15 | 2009-10-02 | 13.38d | 149.12d | 63.98d | Jefe de Proyecto; Consultor; Analista [400%] | 600h | 9,682.69 | 9,682.69 |
| 40 | 1.3.7 | Fin del diseño | milestone | 0d | 2009-12-30 | 2009-12-30 | 33, 35, 36, 39 | 2009-12-30 | 2009-12-30 | 0d | 85.2d |  |  |  |  |  |
| 41 | 1.4 | **Implementacion** |  | 101d | 2009-12-30 | 2010-05-20 | 28 | 2009-12-30 | 2010-05-20 | 101d | 85.02d | 0d |  | 3424h | 40,096.92 | 40,096.92 |
| 42 | 1.4.1 | **Generación del Código de los Componentes y Procedimientos** |  | 63d | 2009-12-30 | 2010-03-29 |  | 2009-12-30 | 2010-03-29 | 63d | 85.2d | 0d |  | 1408h | 11,264 | 11,264 |
| 43 | 1.4.1.1 | Implementar codigo |  | 38d | 2009-12-30 | 2010-02-22 |  | 2009-12-30 | 2010-02-22 | 38d | 85.2d | 0d | Programador [200%] | 608h | 4,864 | 4,864 |
| 44 | 1.4.1.2 | Implementar codigo de seguridad |  | 25d | 2010-02-22 | 2010-03-29 | 43 | 2010-02-22 | 2010-03-29 | 25d | 85.2d |  | Analista [200%]; Programador [200%] | 800h | 6,400 | 6,400 |
| 45 | 1.4.2 | Elaboración de los Manuales de Usuario |  | 38d | 2010-03-29 | 2010-05-20 | 42 | 2010-03-29 | 2010-05-20 | 38d | 85.02d | 0d | Analista [200%] | 608h | 9,120 | 9,120 |
| 46 | 1.4.3 | Definición de la Formación de Usuarios Finales |  | 37d | 2009-12-30 | 2010-02-19 | 42SS | 2009-12-30 | 2010-02-19 | 37d | 149.2d | 0d | Analista [200%] | 592h | 8,880 | 8,880 |
| 47 | 1.4.4 | Construcción de Componentes de Migración y Carga Inicial de Datos |  | 36.25d | 2009-12-30 | 2010-02-16 | 46SS | 2009-12-30 | 2010-02-16 | 36.25d | 152.02d | 67d | Jefe de Proyecto; Analista; Programador | 816h | 10,832.92 | 10,832.92 |
| 48 | 1.4.5 | Fin de la implementacion | milestone | 0d | 2010-05-20 | 2010-05-20 | 45, 46, 47 | 2010-05-20 | 2010-05-20 | 0d | 85.02d |  |  |  |  |  |
| 49 | 1.5 | **Banco de pruebas** |  | 28d | 2010-05-20 | 2010-06-29 | 41 | 2010-05-20 | 2010-06-29 | 28d | 85.02d | 0d |  | 1296h | 18,503.06 | 18,503.06 |
| 50 | 1.5.1 | Ejecución de las Pruebas Unitarias |  | 28d | 2010-05-20 | 2010-06-29 |  | 2010-05-20 | 2010-06-29 | 28d | 85.02d | 0d | Analista; Programador | 448h | 5,152 | 5,152 |
| 51 | 1.5.2 | Ejecutar pruebas de integracion |  | 23d | 2010-05-20 | 2010-06-22 | 50SS | 2010-05-20 | 2010-06-22 | 23d | 90.02d | 0d | Cable de Red [35.79 metro]; Servidor; Analista [200%] | 368h | 6,771.83 | 6,771.83 |
| 52 | 1.5.3 | Integración de las Pruebas del Sistema |  | 16.12d | 2010-05-20 | 2010-06-10 | 51SS | 2010-05-20 | 2010-06-10 | 16.12d | 98.2d | 13d | Jefe de Proyecto; Analista [200%]; Programador | 480h | 6,579.23 | 6,579.23 |
| 53 | 1.5.4 | Fin del banco de Pruebas | milestone | 0d | 2010-06-29 | 2010-06-29 | 50, 51, 52 | 2010-06-29 | 2010-06-29 | 0d | 86.2d |  |  |  |  |  |

| ID | WBS | Task | Type | Duration | Start | Finish | Predecessors | Baseline start | Baseline finish | Baseline duration | Total slack | Free slack | Constraint | Resources | Work | Cost | Baseline cost |
| --- | --- | --- | --- | --- | --- | --- | --- | --- | --- | --- | --- | --- | --- | --- | --- | --- | --- |
| 54 | 1.6 | **Implantacion** |  | 154.02d | 2010-06-29 | 2011-01-31 | 49 | 2010-06-29 | 2011-01-31 | 154.02d | 0d |  |  |  | 1844.04h | 25,389.5 | 25,389.5 |
| 55 | 1.6.1 | **Establecimiento del Plan de Implantación** |  | 27.56d | 2010-06-29 | 2010-08-06 |  | 2010-06-29 | 2010-08-06 | 27.56d | 86.2d | 0d |  |  | 672h | 10,489.23 | 10,489.23 |
| 56 | 1.6.1.1 | Definición del Plan de Implantación |  | 12.88d | 2010-06-29 | 2010-07-15 |  | 2010-06-29 | 2010-07-15 | 12.88d | 86.2d | 0d |  | Jefe de Proyecto; Analista [200%] | 288h | 4,495.38 | 4,495.38 |
| 57 | 1.6.1.2 | Especificación del Equipo de Implantación |  | 17.12d | 2010-07-15 | 2010-08-06 | 56 | 2010-07-15 | 2010-08-06 | 17.12d | 87.2d |  |  | Jefe de Proyecto; Analista [200%] | 384h | 5,993.85 | 5,993.85 |
| 58 | 1.6.2 | Pruebas de Implantación del Sistema |  | 17.12d | 2010-08-09 | 2010-08-31 | 55FS+1d | 2010-08-09 | 2010-08-31 | 17.12d | 92.45d | 5.44d |  | Jefe de Proyecto; Analista | 256h | 4,073.85 | 4,073.85 |
| 59 | 1.6.3 | Establecimiento del Acuerdo de Nivel de Servicio |  | 23.38d | 2010-08-06 | 2010-09-07 | 55, 58FF | 2010-08-06 | 2010-09-07 | 23.38d | 87.02d |  | finish no later than 2011-01-09 | Director Empresa; Jefe de Proyecto [93.8%]; Analista | 404.04h | 4,298.73 | 4,298.73 |
| 60 | 1.6.4 | Presentación y Aprobación del Sistema |  | 17d | 2011-01-10 | 2011-01-31 | 59FS+1d | 2011-01-10 | 2011-01-31 | 17d | 0d |  | must finish on 2011-01-31 | Director Empresa; Jefe de Proyecto | 256h | 2,453.85 | 2,453.85 |
| 61 | 1.6.5 | Preparación de Mantenimiento |  | 17.12d | 2010-06-30 | 2010-07-22 | 55SS+1d | 2010-06-30 | 2010-07-22 | 17.12d | 137.02d |  |  | Jefe de Proyecto; Analista | 256h | 4,073.85 | 4,073.85 |
| 62 | 1.6.6 | Fin del implantacion | milestone | 0d | 2011-01-31 | 2011-01-31 | 60, 61 | 2011-01-31 | 2011-01-31 | 0d | 0d |  |  |  |  |  |  |
| 63 | 1.7 | Fin de proyecto | milestone | 0d | 2011-01-31 | 2011-01-31 | 54 | 2011-01-31 | 2011-01-31 | 0d | 0d |  |  |  |  |  |  |
