# p1bis

Schedule from MS Project, 2010-05-03 to 2010-08-09, costs in €.
SRG

## Calendars

- Estándar: Mon-Fri 09:00-13:00, 15:00-19:00; Sat-Sun off.

## Resources

| Resource | Group | Rate |
| --- | --- | --- |
| Coordinador | Organización | 22.68 |
| Analista | Personal contratado | 18.53 |
| Programador | Personal contratado | 12.02 |
| Secretario | Personal contratado | 8.65 |
| Operario de servicio técnico | Personal contratado | 12.91 |
| Usuario experto | Personal contratado | 9.62 |
| Miembro del grupo de trabajo | Organización | 14.53 |
| Sala de juntas |  | 40 |
| Proyector |  | 400 |
| Pizarra interactiva |  | 300 |
| Impresora láser color |  | 1700 |
| Servidor Central |  | 2000 |
| Red Hat Enterprise Linux 5 |  | 600 |
| Ordenador |  | 0.1 |

## Schedule

| ID | WBS | Task | Type | Duration | Start | Finish | Predecessors | Total slack | Free slack | Resources | Work | Cost |
| --- | --- | --- | --- | --- | --- | --- | --- | --- | --- | --- | --- | --- |
| 1 | 1 | **Análisis** |  | 22.03d | 2010-05-03 | 2010-06-02 |  | 0d |  |  | 2208.35h | 21,256.03 |
| 2 | 1.1 | Definición del sistema |  | 3.83d | 2010-05-03 | 2010-05-06 |  | 0d |  | Coordinador; Miembro del grupo de trabajo [400%]; Ordenador [600%]; Analista; Pizarra interactiva | 189.47h | 3,344.8 |
| 3 | 1.2 | Establecimiento de requisitos |  | 3.75d | 2010-05-06 | 2010-05-12 | 2 | 0d |  | Miembro del grupo de trabajo [200%]; Coordinador; Ordenador [300%] | 120h | 1,555.28 |
| 4 | 1.3 | Identificación de subsistemas |  | 2d | 2010-05-12 | 2010-05-14 | 3 | 0d |  | Miembro del grupo de trabajo [200%]; Analista; Ordenador [300%] | 96h | 766.03 |
| 5 | 1.4 | **Elaboración del modelo de datos** |  | 9.43d | 2010-05-12 | 2010-05-26 | 4SS | 0d |  |  | 443.52h | 3,935.64 |
| 6 | 1.4.1 | Elaboración de modelo conceptual y lógica de datos |  | 5d | 2010-05-12 | 2010-05-19 |  | 0d |  | Coordinador; Analista; Ordenador [200%]; Pizarra interactiva | 160h | 1,956.1 |
| 7 | 1.4.2 | Normalización |  | 2.43d | 2010-05-19 | 2010-05-24 | 6 | 0d |  | Miembro del grupo de trabajo [400%]; Ordenador [400%] | 155.52h | 1,137.43 |
| 8 | 1.4.3 | Especificación de necesidades de carga inicial |  | 2d | 2010-05-24 | 2010-05-26 | 7 | 0d |  | Secretario; Miembro del grupo de trabajo [300%]; Ordenador [400%] | 128h | 842.12 |
| 9 | 1.5 | Elaboración del modelo de procesos |  | 5.78d | 2010-05-12 | 2010-05-20 | 5SS | 3.65d | 0d | Coordinador; Analista; Ordenador [400%]; Miembro del grupo de trabajo [200%] | 369.92h | 3,267.19 |
| 10 | 1.6 | Definición de interfaz de usuario |  | 5.5d | 2010-05-12 | 2010-05-20 | 9SS | 3.93d |  | Usuario experto; Miembro del grupo de trabajo [300%]; Secretario; Ordenador [500%]; Pizarra interactiva | 440h | 3,043.13 |
| 11 | 1.7 | Análisis de consistencia y especificación de requisitos |  | 3.28d | 2010-05-26 | 2010-05-31 | 10, 9, 5, 4 | 0.94d |  | Analista; Coordinador; Miembro del grupo de trabajo [400%]; Pizarra interactiva; Ordenador [600%] | 314.88h | 2,921.69 |
| 12 | 1.8 | Especificación de plan de pruebas |  | 4.22d | 2010-05-26 | 2010-06-01 | 5, 10, 9, 4 | 0d |  | Usuario experto; Analista; Coordinador; Ordenador [300%] | 202.56h | 1,725.61 |
| 13 | 1.9 | Aprobación del análisis del SI |  | 0.8d | 2010-06-01 | 2010-06-02 | 12, 11 | 0d |  | Ordenador; Coordinador; Analista; Pizarra interactiva; Programador; Secretario | 32h | 696.67 |
| 14 | 1.10 | Análisis aprobado | milestone | 0d | 2010-06-02 | 2010-06-02 | 13 | 0d |  |  |  |  |
| 15 | 2 | **Diseño** |  | 32.01d | 2010-06-02 | 2010-07-16 | 1 | 0d |  |  | 2479.44h | 25,072.95 |
| 16 | 2.1 | Definición de la arquitectura del sistema |  | 4.57d | 2010-06-02 | 2010-06-08 | 14 | 0d |  | Coordinador; Analista; Ordenador [200%]; Pizarra interactiva; Miembro del grupo de trabajo [400%] | 292.48h | 3,938.72 |
| 17 | 2.2 | Diseño de la arquitectura de soporte |  | 4.57d | 2010-06-08 | 2010-06-15 | 16 | 0d |  | Analista; Coordinador; Miembro del grupo de trabajo [200%]; Ordenador [400%]; Pizarra interactiva | 292.48h | 2,883.23 |
| 18 | 2.3 | **Diseño de la arquitectura de módulos de sistema** |  | 16.55d | 2010-06-08 | 2010-07-01 | 17SS | 0d |  |  | 591.2h | 6,389.81 |
| 19 | 2.3.1 | Diseño de módulos del sistema |  | 8.43d | 2010-06-08 | 2010-06-21 |  | 0d |  | Miembro del grupo de trabajo [200%]; Ordenador [200%] | 269.76h | 1,972.94 |
| 20 | 2.3.2 | Diseño de comucación entre módulos |  | 4.27d | 2010-06-21 | 2010-06-25 | 19 | 0d |  | Miembro del grupo de trabajo [200%]; Coordinador [200%] | 136.64h | 2,542.56 |
| 21 | 2.3.3 | Revisión de la interfaz de usuario |  | 3.85d | 2010-06-25 | 2010-07-01 | 20 | 0d |  | Coordinador; Analista; Usuario experto; Ordenador [300%]; Pizarra interactiva | 184.8h | 1,874.31 |
| 22 | 2.4 | **Diseño físico de datos** |  | 11.72d | 2010-06-08 | 2010-06-24 | 18SS | 4.83d |  |  | 503.04h | 4,026.02 |
| 23 | 2.4.1 | Diseño del modelo físico de datos |  | 3.57d | 2010-06-08 | 2010-06-14 |  | 4.83d | 0d | Coordinador; Analista; Ordenador [300%]; Miembro del grupo de trabajo | 171.36h | 1,600.21 |
| 24 | 2.4.2 | Especificación de los caminos de acceso a los datos |  | 4.43d | 2010-06-14 | 2010-06-18 | 23 | 4.83d | 0d | Miembro del grupo de trabajo [300%]; Ordenador [300%] | 212.64h | 1,555.19 |
| 25 | 2.4.3 | Especificación de la distribución de datos |  | 3.72d | 2010-06-18 | 2010-06-24 | 24 | 4.83d |  | Miembro del grupo de trabajo [200%]; Ordenador [200%] | 119.04h | 870.62 |
| 26 | 2.5 | Verificación y aceptación de la arquitectura del sistema |  | 1.43d | 2010-07-01 | 2010-07-02 | 22, 18, 17 | 0d |  | Coordinador; Miembro del grupo de trabajo [400%]; Ordenador [500%] | 114.4h | 929.96 |
| 27 | 2.6 | Generación y especificación de construcción |  | 5.73d | 2010-07-02 | 2010-07-12 | 26 | 0d |  | Coordinador; Analista; Ordenador [200%] | 183.36h | 1,897.89 |
| 28 | 2.7 | Diseño de migración y carga inicial de datos |  | 2.87d | 2010-07-02 | 2010-07-07 | 27SS | 0d |  | Miembro del grupo de trabajo [200%]; Ordenador [200%] | 91.84h | 671.69 |
| 29 | 2.8 | Especificación técnica del plan de prueba |  | 3.73d | 2010-07-02 | 2010-07-08 | 28SS | 0d |  | Miembro del grupo de trabajo [200%]; Ordenador [200%] | 119.36h | 872.96 |
| 30 | 2.9 | Establecimiento de requisitos de implantación |  | 8.03d | 2010-07-02 | 2010-07-14 | 29SS | 0d |  | Miembro del grupo de trabajo; Coordinador; Ordenador [200%] | 256.96h | 2,403.07 |
| 31 | 2.10 | Aprobación del diseño y SI |  | 1.43d | 2010-07-14 | 2010-07-16 | 30, 29, 28, 27 | 0d |  | Coordinador; Secretario; Pizarra interactiva; Proyector; Ordenador | 34.32h | 1,059.61 |
| 32 | 2.11 | Diseño Aprobado | milestone | 0d | 2010-07-16 | 2010-07-16 | 31 | 0d |  |  |  |  |

| ID | WBS | Task | Type | Duration | Start | Finish | Predecessors | Total slack | Free slack | Constraint | Resources | Work | Cost |
| --- | --- | --- | --- | --- | --- | --- | --- | --- | --- | --- | --- | --- | --- |
| 33 | 3 | **Implementación** |  | 11.39d | 2010-07-16 | 2010-08-02 | 15 | 0d |  |  |  | 505.6h | 3,350.99 |
| 34 | 3.1 | Preparación del entorno de generación y contrucción |  | 2.09d | 2010-07-16 | 2010-07-20 | 32 | 0d |  |  | Programador; Ordenador; Miembro del grupo de trabajo | 50.08h | 444.82 |
| 35 | 3.2 | Generación del código de los componentes y procedimientos |  | 9.3d | 2010-07-20 | 2010-08-02 | 34 | 0d |  |  | Programador; Ordenador | 148.8h | 901.38 |
| 36 | 3.3 | Elaboración del manual de usuario |  | 7.07d | 2010-07-16 | 2010-07-27 | 34SS | 4.32d | 0d |  | Programador; Ordenador [200%]; Secretario | 169.6h | 1,174.15 |
| 37 | 3.4 | Definición de la formación de usuarios finales |  | 3.57d | 2010-07-16 | 2010-07-21 | 36SS | 6.39d | 0d |  | Programador; Ordenador | 57.12h | 346.02 |
| 38 | 3.5 | Construcción de los componentes y procedimientos de carga inicial de datos |  | 5d | 2010-07-16 | 2010-07-23 | 37SS | 6.39d |  |  | Programador; Ordenador | 80h | 484.62 |
| 39 | 3.6 | Implementación aprobada | milestone | 0d | 2010-07-16 | 2010-07-16 |  | 11.39d |  |  |  |  |  |
| 40 | 4 | **Pruebas** |  | 4.65d | 2010-08-02 | 2010-08-09 | 33 | 0d |  |  |  | 269.92h | 3,605.59 |
| 41 | 4.1 | Ejecución de las pruebas unitarias |  | 2d | 2010-08-02 | 2010-08-04 |  | 0d |  |  | Usuario experto; Coordinador; Pizarra interactiva; Ordenador [200%] | 64h | 819.87 |
| 42 | 4.2 | Ejecución de las pruebas de integración |  | 2.29d | 2010-08-02 | 2010-08-04 | 41SS | 0d |  |  | Usuario experto; Coordinador; Pizarra interactiva; Ordenador [200%] | 73.12h | 893.95 |
| 43 | 4.3 | Ejecución de las pruebas del sistema |  | 2.65d | 2010-08-02 | 2010-08-05 | 42SS | 0d |  |  | Usuario experto; Coordinador; Pizarra interactiva; Ordenador [200%] | 84.8h | 988.83 |
| 44 | 4.4 | Aprobación del SI |  | 2d | 2010-08-05 | 2010-08-09 | 43, 41, 42 | 0d |  |  | Secretario; Coordinador; Proyector; Ordenador | 48h | 902.95 |
| 45 | 4.5 | Proyecto Finalizado | milestone | 0d | 2010-08-02 | 2010-08-02 |  | 4.65d |  |  |  |  |  |
| 46 | 5 | **Reunión del grupo de trabajo** |  | 65.38d | 2010-05-03 | 2010-08-02 |  | 4.7d |  |  |  | 225h | 12,805.68 |
| 47 | 5.1 | Reunión del grupo de trabajo 1 |  | 3h | 2010-05-03 | 2010-05-03 |  | 69.7d |  | start no earlier than 2010-05-03 | Miembro del grupo de trabajo [400%]; Coordinador; Ordenador; Pizarra interactiva; Proyector | 9h | 811.93 |
| 48 | 5.2 | Reunión del grupo de trabajo 2 |  | 3h | 2010-05-10 | 2010-05-10 |  | 64.7d |  | start no earlier than 2010-05-10 | Miembro del grupo de trabajo [400%]; Coordinador; Ordenador; Pizarra interactiva; Proyector | 9h | 811.93 |
| 49 | 5.3 | Reunión del grupo de trabajo 3 |  | 3h | 2010-05-17 | 2010-05-17 |  | 59.7d |  | start no earlier than 2010-05-17 | Miembro del grupo de trabajo [400%]; Coordinador; Ordenador; Pizarra interactiva; Proyector | 9h | 811.93 |
| 50 | 5.4 | Reunión del grupo de trabajo 4 |  | 3h | 2010-05-24 | 2010-05-24 |  | 54.7d |  | start no earlier than 2010-05-24 | Miembro del grupo de trabajo [400%]; Coordinador; Ordenador; Pizarra interactiva; Proyector | 18h | 942.72 |
| 51 | 5.5 | Reunión del grupo de trabajo 5 |  | 3h | 2010-05-31 | 2010-05-31 |  | 49.7d |  | start no earlier than 2010-05-31 | Miembro del grupo de trabajo [400%]; Coordinador; Ordenador; Pizarra interactiva; Proyector | 18h | 942.72 |
| 52 | 5.6 | Reunión del grupo de trabajo 6 |  | 3h | 2010-06-07 | 2010-06-07 |  | 44.7d |  | start no earlier than 2010-06-07 | Miembro del grupo de trabajo [400%]; Coordinador; Ordenador; Pizarra interactiva; Proyector | 18h | 942.72 |
| 53 | 5.7 | Reunión del grupo de trabajo 7 |  | 3h | 2010-06-14 | 2010-06-14 |  | 39.7d |  | start no earlier than 2010-06-14 | Miembro del grupo de trabajo [400%]; Coordinador; Ordenador; Pizarra interactiva; Proyector | 18h | 942.72 |
| 54 | 5.8 | Reunión del grupo de trabajo 8 |  | 3h | 2010-06-21 | 2010-06-21 |  | 34.7d |  | start no earlier than 2010-06-21 | Miembro del grupo de trabajo [400%]; Coordinador; Ordenador; Pizarra interactiva; Proyector | 18h | 942.72 |
| 55 | 5.9 | Reunión del grupo de trabajo 9 |  | 3h | 2010-06-28 | 2010-06-28 |  | 29.7d |  | start no earlier than 2010-06-28 | Miembro del grupo de trabajo [400%]; Coordinador; Ordenador; Pizarra interactiva; Proyector | 18h | 942.72 |
| 56 | 5.10 | Reunión del grupo de trabajo 10 |  | 3h | 2010-07-05 | 2010-07-05 |  | 24.7d |  | start no earlier than 2010-07-05 | Miembro del grupo de trabajo [400%]; Coordinador; Ordenador; Pizarra interactiva; Proyector | 18h | 942.72 |
| 57 | 5.11 | Reunión del grupo de trabajo 11 |  | 3h | 2010-07-12 | 2010-07-12 |  | 19.7d |  | start no earlier than 2010-07-12 | Miembro del grupo de trabajo [400%]; Coordinador; Ordenador; Pizarra interactiva; Proyector | 18h | 942.72 |
| 58 | 5.12 | Reunión del grupo de trabajo 12 |  | 3h | 2010-07-19 | 2010-07-19 |  | 14.7d |  | start no earlier than 2010-07-19 | Miembro del grupo de trabajo [400%]; Coordinador; Ordenador; Pizarra interactiva; Proyector | 18h | 942.72 |
| 59 | 5.13 | Reunión del grupo de trabajo 13 |  | 3h | 2010-07-26 | 2010-07-26 |  | 9.7d |  | start no earlier than 2010-07-26 | Miembro del grupo de trabajo [400%]; Coordinador; Ordenador; Pizarra interactiva; Proyector | 18h | 942.72 |
| 60 | 5.14 | Reunión del grupo de trabajo 14 |  | 3h | 2010-08-02 | 2010-08-02 |  | 4.7d |  | start no earlier than 2010-08-02 | Miembro del grupo de trabajo [400%]; Coordinador; Ordenador; Pizarra interactiva; Proyector | 18h | 942.72 |
